# caArray

Schedule from MS Project, 2007-04-02 to 2007-12-14, A marks actual dates.
Project Schedule
5AM Solutions

## Calendars

- Standard: Mon-Fri 08:00-12:00, 13:00-17:00; Sat-Sun off.

## Resources

| Resource |
| --- |
| etavela |
| smatyas |
| bgendleman |
| rdaly |
| jpike |
| smiller |
| pduvall |
| aglover |
| bmason |
| tparnell |
| mrehfuss |
| jhedden |
| dkokotov |
| lgurses |
| rsrinivasa |
| wcheng |

## Schedule

| ID | WBS | Task | Duration | Start | Finish | Predecessors | Complete | Remaining | Baseline start | Baseline finish | Baseline duration | Total slack | Free slack | Constraint | Deadline | Resources | Work | Actual work |
| --- | --- | --- | --- | --- | --- | --- | --- | --- | --- | --- | --- | --- | --- | --- | --- | --- | --- | --- |
| 1 | 1 | **caArray 2.0** | 184d | 2007-04-02 A | 2007-12-14 |  | 77% | 42.56d | 2007-04-02 | 2007-05-21 | 35.75d? | -29d | 0d |  | 2007-07-27 |  | 13231.4h | 10803h |
| 2 | 1.1 | **Inception Phase** | 33d | 2007-04-02 A | 2007-05-16 A |  | 100% |  | 2007-04-02 | 2007-05-15 | 32d |  |  |  |  |  | 634.28h | 634.28h |
| 3 | 1.1.1 | **Inception Iteration 1** | 33d | 2007-04-02 A | 2007-05-16 A |  | 100% |  | 2007-04-02 | 2007-05-15 | 32d |  |  |  |  |  | 634.28h | 634.28h |
| 4 | 1 | **Project Management** | 31.25d | 2007-04-02 A | 2007-05-15 A |  | 100% |  | 2007-04-02 | 2007-05-15 | 31.25d |  |  |  |  |  | 20h | 20h |
| 5 | 1.1.1.1.1 | Plan the project | 12d | 2007-04-02 A | 2007-04-19 A |  | 100% |  | 2007-04-02 | 2007-04-19 | 12d |  |  | start no earlier than 2007-04-02 |  | rdaly [5%]; bgendleman | 20h | 20h |
| 6 | 1.4 | Plan Remainder of Initial Iteration | 1d | 2007-04-19 A | 2007-04-19 A |  | 100% |  | 2007-04-19 | 2007-04-19 | 1d |  |  | start no earlier than 2007-04-19 |  |  |  |  |
| 7 | 1.8 | Plan for Next Iteration | 5d | 2007-05-07 A | 2007-05-11 A |  | 100% |  | 2007-05-07 | 2007-05-11 | 5d |  |  |  |  |  |  |  |
| 8 | 1.1.1.1.4 | **Finalize Deliverables** | 31.25d | 2007-04-02 A | 2007-05-15 A |  | 100% |  | 2007-04-02 | 2007-05-15 | 31.25d |  |  |  |  |  |  |  |
| 9 | 1.1.1.1.4.1 | March Status Report | 2h | 2007-04-16 A | 2007-04-16 A |  | 100% |  | 2007-04-16 | 2007-04-16 | 2h |  |  | start no earlier than 2007-04-16 | 2007-04-18 |  |  |  |
| 10 | 1.1.1.1.4.2 | April Status Report | 2h | 2007-05-15 A | 2007-05-15 A |  | 100% |  | 2007-05-15 | 2007-05-15 | 2h |  |  | start no earlier than 2007-05-15 | 2007-05-15 |  |  |  |
| 11 | 1.1.1.1.4.3 | Release Risk List | 2h | 2007-04-02 A | 2007-04-02 A |  | 100% |  | 2007-04-02 | 2007-04-02 | 2h |  |  |  | 2007-05-15 |  |  |  |
| 12 | 3 | **Requirements** | 30.5d | 2007-04-02 A | 2007-05-14 A |  | 100% |  | 2007-04-02 | 2007-05-14 | 30.35d |  |  |  |  |  | 160.6h | 160.6h |
| 13 | 3.1 | Define the Preliminary Vision | 5d | 2007-04-23 A | 2007-05-04 A | 5SS, 14FF | 100% |  | 2007-04-23 | 2007-05-04 | 5d |  |  | start no earlier than 1999-05-04 |  |  |  |  |
| 14 | 3.2 | **Elicit Stakeholder Needs** | 22.4d | 2007-04-04 A | 2007-05-04 A | 5SS | 100% |  | 2007-04-04 | 2007-05-04 | 22.75d |  |  |  |  |  | 45h | 45h |
| 15 | 1.1.1.2.2.1 | Live Meeting with NCICB Stakeholders | 4.38d | 2007-04-04 A | 2007-04-12 A |  | 100% |  | 2007-04-04 | 2007-04-11 | 4.38d |  |  | start no earlier than 2007-04-04 |  | bgendleman; rdaly; etavela [25%] | 30h | 30h |
| 16 | 1.1.1.2.2.2 | Teleconference with Columbia - Aris | 1h | 2007-04-09 A | 2007-04-09 A | 15 | 100% |  | 2007-04-09 | 2007-04-09 | 1h |  |  |  |  | bgendleman | 1h | 1h |
| 17 | 1.1.1.2.2.3 | Teleconference with Northwestern | 2h | 2007-04-20 A | 2007-04-20 A |  | 100% |  | 2007-04-20 | 2007-04-20 | 2h |  |  | start no earlier than 2007-04-20 |  | bgendleman | 2h | 2h |
| 18 | 1.1.1.2.2.4 | Live Meeting with Georgetown | 4h | 2007-04-23 A | 2007-04-23 A | 17 | 100% |  | 2007-04-27 | 2007-04-27 | 4h |  |  | start no earlier than 2007-04-23 |  | bgendleman | 4h | 4h |
| 19 | 1.1.1.2.2.5 | Live Meeting with Thomas Jefferson | 4h | 2007-04-27 A | 2007-04-27 A | 18 | 100% |  | 2007-04-27 | 2007-05-04 | 4h |  |  | start no earlier than 2007-04-26 |  | bgendleman | 4h | 4h |
| 20 | 1.1.1.2.2.6 | Live Meeting with U Pitt | 4h | 2007-05-03 A | 2007-05-04 A | 19 | 100% |  | 2007-05-04 | 2007-05-04 | 4h |  |  | start no earlier than 2007-04-30 |  | bgendleman | 4h | 4h |
| 21 | 3.3 | Identify and Describe Use Cases | 4d | 2007-04-18 A | 2007-04-23 A |  | 100% |  | 2007-04-18 | 2007-04-23 | 4d |  |  | finish no earlier than 2007-04-20 |  | bgendleman; rdaly | 56h | 56h |
| 22 | 3.5 | Refine the System Definition | 6.35d | 2007-04-24 A | 2007-05-04 A | 6, 21 | 100% |  | 2007-04-24 | 2007-05-10 | 6.25d |  |  | start no earlier than 2007-04-18 |  | bgendleman; etavela [10%] | 20h | 20h |
| 23 | 1.1.1.2.5 | **Implement Requirement and Test Traceability** | 3.25d | 2007-04-16 A | 2007-04-19 A |  | 100% |  | 2007-04-16 | 2007-04-20 | 4.6d |  |  |  |  |  | 3.6h | 3.6h |
| 24 | 1.1.1.2.5.1 | Determine Approach | 2.25d | 2007-04-16 A | 2007-04-19 A |  | 100% |  | 2007-04-16 | 2007-04-20 | 2.25d |  |  | start no earlier than 2007-04-16 |  | bgendleman [20%]; etavela [20%] | 3.6h | 3.6h |
| 25 | 3.6 | Manage Changing Requirements | 1d | 2007-04-27 A | 2007-05-04 A | 13SS | 100% |  | 2007-04-27 | 2007-05-04 | 1d |  |  | start no earlier than 2007-04-25 |  | bgendleman | 8h | 8h |

Notes:
- 15: expect follow up with Suba, Mervi and Xiaopeng as requirements contributors

| ID | WBS | Task | Type | Duration | Start | Finish | Predecessors | Complete | Baseline start | Baseline finish | Baseline duration | Constraint | Deadline | Resources | Work | Actual work |
| --- | --- | --- | --- | --- | --- | --- | --- | --- | --- | --- | --- | --- | --- | --- | --- | --- |
| 26 | 1.1.1.2.7 | **Finalize Deliverables** |  | 30.5d | 2007-04-02 A | 2007-05-14 A |  | 100% | 2007-04-02 | 2007-05-14 | 30.35d |  |  |  | 28h | 28h |
| 27 | 1.1.1.2.7.1 | Requirements Management Plan |  | 0.25d | 2007-04-02 A | 2007-04-09 A |  | 100% | 2007-04-02 | 2007-04-09 | 0.25d |  |  | bgendleman | 2h | 2h |
| 28 | 1.1.1.2.7.2 | Finalize Questionnaire |  | 0.25d | 2007-04-02 A | 2007-04-02 A |  | 100% | 2007-04-02 | 2007-04-02 | 0.25d |  |  | bgendleman | 2h | 2h |
| 29 | 1.1.1.2.7.3 | Draft Vision Document |  | 1d | 2007-04-30 A | 2007-05-11 A | 20, 13 | 100% | 2007-04-30 | 2007-05-11 | 1d |  |  | bgendleman | 8h | 8h |
| 30 | 1.1.1.2.7.4 | Draft Supplementary Spec |  | 1d | 2007-05-11 A | 2007-05-14 A | 29 | 100% | 2007-05-11 | 2007-05-14 | 1d |  |  | bgendleman | 8h | 8h |
| 31 | 1.1.1.2.7.5 | Draft Use Case Model |  | 1d | 2007-04-27 A | 2007-05-03 A | 21 | 100% | 2007-04-27 | 2007-05-04 | 1d |  | 2007-05-04 | bgendleman | 8h | 8h |
| 32 | 4 | **Analysis and Design** |  | 33d | 2007-04-02 A | 2007-05-16 A |  | 100% | 2007-04-02 | 2007-04-20 | 15d |  |  |  | 71.68h | 71.68h |
| 33 | 4.1 | Use Case Analysis (Manage Protocols) |  | 1d | 2007-04-05 A | 2007-04-05 A |  | 100% | 2007-04-05 | 2007-04-05 | 1d | start no earlier than 2007-04-05 |  | etavela | 8h | 8h |
| 34 | 1.1.1.3.2 | Use Case Design (Manage Protocols) |  | 1d | 2007-04-06 A | 2007-04-06 A | 33 | 100% | 2007-04-06 | 2007-04-06 | 1d |  |  | etavela | 8h | 8h |
| 35 | 1.1.1.3.3 | Vocabulary Management Subsystem Design |  | 4.95d | 2007-04-04 A | 2007-04-12 A |  | 100% | 2007-04-04 | 2007-04-12 | 4.95d | start no earlier than 2007-04-04 |  | etavela [10%]; jpike | 26.08h | 26.08h |
| 36 | 1.1.1.3.4 | Data Access Subsystem Design |  | 1d | 2007-04-09 A | 2007-04-13 A |  | 100% | 2007-04-09 | 2007-04-20 | 3d | start no earlier than 2007-04-09 | 2007-04-20 | etavela [25%] | 2h | 2h |
| 37 | 1.1.1.3.5 | MAGE-OM Façade |  | 3d | 2007-04-02 A | 2007-04-10 A |  | 100% | 2007-04-02 | 2007-04-10 | 4.5d |  |  | etavela [25%] | 6h | 6h |
| 38 | 1.1.1.3.6 | **Finalize Deliverables** |  | 3d | 2007-05-14 A | 2007-05-16 A |  | 100% | 2007-04-11 | 2007-04-19 | 6d |  |  |  | 21.6h | 21.6h |
| 39 | 1.1.1.3.6.1 | Release Candidate Software Architecture Document |  | 3d | 2007-05-14 A | 2007-05-16 A |  | 100% | 2007-04-11 | 2007-04-19 | 5d | start no earlier than 2007-05-14 |  | etavela [90%] | 21.6h | 21.6h |
| 40 | 1.1.1.4 | **Implementation** |  | 31.82d | 2007-04-02 A | 2007-05-15 A |  | 100% | 2007-04-02 | 2007-05-15 | 32d |  |  |  | 191.2h | 191.2h |
| 41 | 1.1.1.4.1 | Structure the Implementation Model |  | 1.5d | 2007-04-02 A | 2007-04-04 A |  | 100% | 2007-04-02 | 2007-04-04 | 1.5d | start no earlier than 2007-04-09 | 2007-04-06 | etavela | 12h | 12h |
| 42 | 1.1.1.4.2 | Implement Vocabulary Subsystem |  | 3w | 2007-04-13 A | 2007-05-08 A | 41, 35 | 100% | 2007-04-12 | 2007-05-08 | 3w |  |  | jpike | 120h | 120h |
| 43 | 1.1.1.4.3 | Implement Data Access |  | 3d | 2007-04-16 A | 2007-04-30 A | 41 | 100% | 2007-04-16 | 2007-04-24 | 3d | start no earlier than 2007-04-16 | 2007-04-20 |  |  |  |
| 44 | 1.1.1.4.4 | Implement Protocol Management |  | 1.6w | 2007-04-16 A | 2007-05-09 A | 34 | 100% | 2007-04-16 | 2007-05-09 | 2.1w | start no earlier than 2007-04-16 |  | jpike; etavela [10%] | 28h | 28h |
| 45 | 1.1.1.4.5 | Implement Protocol User Interface (minimal) |  | 3d | 2007-05-09 A | 2007-05-14 A | 44 | 100% | 2007-05-09 | 2007-05-14 | 3d |  |  | jpike | 24h | 24h |
| 46 | 1.1.1.4.6 | **Finalize Deliverables** |  | 1d | 2007-05-14 A | 2007-05-15 A |  | 100% | 2007-05-14 | 2007-05-15 | 1d |  |  |  | 7.2h | 7.2h |
| 47 | 1.1.1.4.6.1 | Release Architectural Prototype |  | 1d | 2007-05-14 A | 2007-05-15 A | 45 | 100% | 2007-05-14 | 2007-05-15 | 1d |  |  | etavela [90%] | 7.2h | 7.2h |
| 48 | 5 | **Test** |  | 31.82d | 2007-04-02 A | 2007-05-15 A |  | 100% | 2007-04-02 | 2007-05-15 | 31.07d |  |  |  | 27.8h | 27.8h |
| 49 | 1.1.1.5.1 | Meet with Indepdent QA |  | 2h | 2007-04-09 A | 2007-04-09 A |  | 100% | 2007-04-09 | 2007-04-09 | 2h | finish no later than 2007-04-27 | 2007-04-27 | bgendleman [80%] | 1.6h | 1.6h |
| 50 | 1.1.1.5.2 | Implement System Tests Against Protocol Management | milestone | 0d | 2007-05-15 A | 2007-05-15 A | 47 | 100% | 2007-05-15 | 2007-05-15 | 0d | start no earlier than 2007-05-14 |  | smatyas |  |  |
| 51 | 5.1 | Analyze and Identify Test Approach |  | 1d | 2007-04-02 A | 2007-04-27 A |  | 100% | 2007-04-02 | 2007-04-27 | 1d |  |  | smatyas; etavela; bgendleman | 8h | 8h |

| ID | WBS | Task | Type | Duration | Start | Finish | Predecessors | Complete | Baseline start | Baseline finish | Baseline duration | Constraint | Deadline | Resources | Work | Actual work |
| --- | --- | --- | --- | --- | --- | --- | --- | --- | --- | --- | --- | --- | --- | --- | --- | --- |
| 52 | 1.1.1.5.4 | **Finalize Deliverables** |  | 4.25d | 2007-04-27 A | 2007-05-03 A |  | 100% | 2007-04-27 | 2007-05-04 | 5d |  |  |  | 18.2h | 18.2h |
| 53 | 1.1.1.5.4.1 | Release Test Plan |  | 2.6d | 2007-04-27 A | 2007-05-03 A | 51 | 100% | 2007-04-27 | 2007-05-04 | 2.5d |  |  | smatyas; bgendleman [25%]; etavela [5%] | 18.2h | 18.2h |
| 54 | 6 | **Environment** |  | 30.25d | 2007-04-02 A | 2007-05-14 A |  | 100% | 2007-04-02 | 2007-05-14 | 30.25d |  |  |  | 133h | 133h |
| 55 | 1.1.1.6.1 | Launch Development Process |  | 6h | 2007-04-09 A | 2007-04-18 A |  | 100% | 2007-04-09 | 2007-04-18 | 6h | start no earlier than 2007-04-09 |  | smatyas; jpike; smiller | 9h | 9h |
| 56 | 1.1.1.6.2 | **Set Up Tools** |  | 20d | 2007-04-02 A | 2007-04-27 A |  | 100% | 2007-04-02 | 2007-04-27 | 20d |  |  |  | 76h | 76h |
| 57 | 1.1.1.6.2.1 | Set Up Maven |  | 4d | 2007-04-02 A | 2007-04-09 A |  | 100% | 2007-04-02 | 2007-04-09 | 4d | start no earlier than 2007-04-02 |  | smatyas [50%]; smiller [50%] | 16h | 16h |
| 58 | 1.1.1.6.2.2 | Set Up Continuous Integration |  | 1d | 2007-04-16 A | 2007-04-16 A |  | 100% | 2007-04-16 | 2007-04-16 | 1d | start no earlier than 2007-04-16 |  | smatyas | 8h | 8h |
| 59 | 1.1.1.6.2.3 | Set Up Eclipse |  | 2d | 2007-04-03 A | 2007-04-06 A |  | 100% | 2007-04-03 | 2007-04-06 | 2d | start no earlier than 2007-04-03 |  | jpike; smiller [50%] | 12h | 12h |
| 60 | 1.1.1.6.2.4 | Set Up Selenium |  | 2d | 2007-04-26 A | 2007-04-27 A | 58 | 100% | 2007-04-26 | 2007-04-27 | 2d | finish no earlier than 2007-04-27 | 2007-04-27 | smatyas | 16h | 16h |
| 61 | 1.1.1.6.2.5 | Set Up Code Quality Tools |  | 2d | 2007-04-02 A | 2007-04-09 A |  | 100% | 2007-04-02 | 2007-04-09 | 2d |  |  | smatyas; etavela | 24h | 24h |
| 62 | 1.1.1.6.3 | **Finalize Deliverables** |  | 19.25d | 2007-04-17 A | 2007-05-14 A |  | 100% | 2007-04-19 | 2007-05-14 | 17.25d |  |  |  | 48h | 48h |
| 63 | 1.1.1.6.3.1 | Release Development Case |  | 0.25d | 2007-05-14 A | 2007-05-14 A |  | 100% | 2007-05-14 | 2007-05-14 | 0.25d | start no earlier than 2007-05-14 |  | etavela | 2h | 2h |
| 64 | 1.1.1.6.3.2 | Release Guidelines for the Project |  | 1.25d | 2007-04-20 A | 2007-04-23 A |  | 100% | 2007-04-20 | 2007-04-23 | 1.25d | start no earlier than 2007-04-16 |  | etavela | 10h | 10h |
| 65 | 1.1.1.6.3.3 | Release Templates for the Project |  | 5.5d | 2007-04-17 A | 2007-04-30 A |  | 100% | 2007-04-19 | 2007-04-30 | 5.55d | finish no earlier than 2007-04-13 |  | smiller [50%]; etavela | 36h | 36h |
| 66 | 7 | **Configuration & Change Management** |  | 31.25d | 2007-04-02 A | 2007-05-15 A |  | 100% | 2007-04-02 | 2007-05-15 | 31.25d |  |  |  | 30h | 30h |
| 67 | 7.1 | Plan Project Configuration and Change Control |  | 0.5d | 2007-04-20 A | 2007-04-20 A |  | 100% | 2007-04-20 | 2007-04-24 | 0.55d | finish no earlier than 2007-04-20 | 2007-05-15 | etavela; bgendleman | 8h | 8h |
| 68 | 1.1.1.7.2 | **Finalize Deliverables** |  | 31.25d | 2007-04-02 A | 2007-05-15 A |  | 100% | 2007-04-02 | 2007-05-15 | 31.25d |  |  |  | 22h | 22h |
| 69 | 1.1.1.7.2.1 | Release Configuration Management Plan |  | 0.75d | 2007-04-02 A | 2007-05-15 A |  | 100% | 2007-04-02 | 2007-05-15 | 0.75d |  |  | etavela; bgendleman | 6h | 6h |
| 70 | 1.1.1.7.2.2 | G-Forge Implementation of the Change Control Process |  | 2d | 2007-04-02 A | 2007-05-14 A |  | 100% | 2007-04-02 | 2007-05-14 | 2d |  |  | bgendleman | 16h | 16h |
| 71 | 1.1.1.8 | Inception Complete | milestone | 0d | 2007-05-15 A | 2007-05-15 A | 4, 5, 26, 8, 52, 62, 68 | 100% | 2007-05-15 | 2007-05-15 | 0d | start no earlier than 2007-05-15 | 2007-05-15 |  |  |  |
| 72 | 1.2 | caArray 1.x Focus |  | 22d | 2007-05-17 A | 2007-06-18 A | 3 | 100% |  |  |  |  |  | etavela [90%]; bgendleman [80%]; smatyas; jpike | 651.2h | 651.2h |
| 73 | 1.3 | **Elaboration Phase** |  | 58.7d | 2007-06-18 A | 2007-09-06 A | 71, 72 | 100% | 2007-05-15 | 2007-05-17 | 2.5d? |  | 2007-08-27 |  | 5421.96h | 5421.96h |
| 74 | 1.3.1 | **Elaboration - Iteration 1** |  | 29.7d | 2007-06-18 A | 2007-07-27 A |  | 100% | 2007-05-15 | 2007-05-17 | 2.5d |  |  |  | 2483.56h | 2483.56h |
| 75 | 1 | **Project Management** |  | 29.7d | 2007-06-18 A | 2007-07-27 A | 71 | 100% | 2007-04-02 | 2007-05-15 | 31.25d |  |  |  | 500.8h | 500.8h |
| 76 | 1.3.1.1.1 | Inception Post Mortem |  | 4d | 2007-06-28 A | 2007-07-03 A |  | 100% | 2007-05-15 | 2007-05-17 | 20h | start no earlier than 2007-06-28 |  | smatyas; bgendleman [80%]; etavela [90%]; jpike | 118.4h | 118.4h |
| 77 | 1.4 | Plan Remainder of Initial Iteration |  | 1d | 2007-06-27 A | 2007-06-27 A |  | 100% | 2007-04-19 | 2007-04-19 | 1d | start no earlier than 2007-06-27 |  | etavela [90%]; bgendleman [80%] | 13.6h | 13.6h |
| 78 | 1.3.1.1.3 | Weekly Status Meetings |  | 1.5d | 2007-06-18 A | 2007-06-19 A |  | 100% |  |  |  | start no earlier than 2007-05-23 |  | bgendleman [80%] | 9.6h | 9.6h |
| 79 | 1.8 | Plan for Next Iteration |  | 1d | 2007-07-23 A | 2007-07-26 A | 84FF | 100% | 2007-05-07 | 2007-05-11 | 5d | start no earlier than 2007-07-23 |  | bgendleman [80%]; etavela [90%] | 13.6h | 13.6h |

Notes:
- 57: Instructions documented on Wiki
- 59: Instructions documented on Wiki
- 61: Cobertura, PMD, CheckStyle, Simian, JUnit
- 64: UML, Java, JSP/HTML
- 65: Java, JSP/HTML / Use Case Summary / Use Case Specification / Vision / Traceability Matrix - will attempt to do in EA

| ID | WBS | Task | Duration | Start | Finish | Predecessors | Complete | Baseline start | Baseline finish | Baseline duration | Constraint | Deadline | Resources | Work | Actual work |
| --- | --- | --- | --- | --- | --- | --- | --- | --- | --- | --- | --- | --- | --- | --- | --- |
| 80 | 1.3.1.1.5 | **Finalize Deliverables** | 29.7d | 2007-06-18 A | 2007-07-27 A |  | 100% | 2007-04-02 | 2007-05-15 | 31.25d |  |  |  | 345.6h | 345.6h |
| 81 | 1.3.1.1.5.1 | May Status Report | 2h | 2007-06-18 A | 2007-06-18 A |  | 100% | 2007-04-16 | 2007-04-16 | 2h | start no earlier than 2007-06-08 | 2007-04-18 | bgendleman | 2h | 2h |
| 82 | 1.3.1.1.5.2 | June Status Report | 2h | 2007-07-13 A | 2007-07-13 A |  | 100% |  |  |  |  |  | bgendleman | 2h | 2h |
| 83 | 1.3.1.1.5.3 | Update Risk List | 4h | 2007-06-18 A | 2007-07-27 A |  | 100% | 2007-04-02 | 2007-04-02 | 2h | finish no earlier than 2007-07-27 | 2007-05-15 | bgendleman [6774.3%] | 237.6h | 237.6h |
| 84 | 1.9 | Finalize Iteration Plans | 10d | 2007-07-13 A | 2007-07-26 A |  | 100% | 2007-05-11 | 2007-05-11 | 1d | finish no earlier than 2007-07-27 |  | bgendleman [80%]; etavela [50%] | 104h | 104h |
| 85 | 1.3.1.2 | **Requirements** | 27.7d | 2007-06-18 A | 2007-07-25 A |  | 100% |  |  |  |  |  |  | 266.4h | 266.4h |
| 86 | 1.3.1.2.1 | Update Draft Documents | 3d | 2007-06-18 A | 2007-06-21 A |  | 100% |  |  |  | start no earlier than 2007-05-22 |  | bgendleman | 24h | 24h |
| 87 | 1.3.1.2.2 | Write Prioritized Use Cases | 10d | 2007-06-18 A | 2007-07-02 A |  | 100% |  |  |  | start no earlier than 2007-05-25 |  | bgendleman | 80h | 80h |
| 88 | 1.3.1.2.3 | Create Wireframes for targeted Ucs (deferred) | 3d | 2007-07-23 A | 2007-07-25 A | 87, 103 | 100% |  |  |  |  |  | bgendleman | 24h | 24h |
| 89 | 1.3.1.2.4 | Consolidate Models | 1d | 2007-06-18 A | 2007-06-19 A |  | 100% |  |  |  | start no earlier than 2007-05-24 |  | bgendleman [80%]; etavela [90%] | 13.6h | 13.6h |
| 90 | 1.3.1.2.5 | **Finalize Deliverables** | 26.7d | 2007-06-18 A | 2007-07-24 A |  | 100% |  |  |  |  |  |  | 124.8h | 124.8h |
| 91 | 1.3.1.2.5.1 | Update Vision | 1d | 2007-06-21 A | 2007-06-22 A | 86 | 100% |  |  |  |  |  | bgendleman | 8h | 8h |
| 92 | 1.3.1.2.5.2 | Update Supplemental Specification | 1d | 2007-06-21 A | 2007-06-22 A | 86 | 100% |  |  |  |  |  | bgendleman | 8h | 8h |
| 93 | 1.3.1.2.5.3 | UC Login | 1d | 2007-06-18 A | 2007-06-19 A |  | 100% |  |  |  |  |  | bgendleman | 8h | 8h |
| 94 | 1.3.1.2.5.4 | UC Acquire Project Data via API | 2d | 2007-06-18 A | 2007-06-20 A |  | 100% |  |  |  |  |  |  |  |  |
| 95 | 1.3.1.2.5.5 | UC Manage Data Files | 2d | 2007-06-22 A | 2007-06-25 A |  | 100% |  |  |  |  |  | bgendleman [80%] | 12.8h | 12.8h |
| 96 | 1.3.1.2.5.6 | UC Import Project Data | 1d | 2007-07-02 A | 2007-07-03 A | 87 | 100% |  |  |  |  |  | bgendleman | 8h | 8h |
| 97 | 1.3.1.2.5.7 | UC Submit Project Proposal | 1d | 2007-07-03 A | 2007-07-04 A | 96 | 100% |  |  |  |  |  | bgendleman | 8h | 8h |
| 98 | 1.3.1.2.5.8 | UC Report on Work Accomplished | 1d | 2007-07-04 A | 2007-07-05 A | 97 | 100% |  |  |  |  |  | bgendleman | 8h | 8h |
| 99 | 1.3.1.2.5.9 | UC Validate File for Submission | 1d | 2007-07-05 A | 2007-07-06 A | 98 | 100% |  |  |  |  |  | bgendleman | 8h | 8h |
| 100 | 1.3.1.2.5.10 | UC Download Project Data (deferred) | 1d | 2007-07-06 A | 2007-07-09 A | 99 | 100% |  |  |  |  |  | bgendleman | 8h | 8h |
| 101 | 1.3.1.2.5.11 | UC Manage Users | 1d | 2007-07-09 A | 2007-07-10 A | 100 | 100% |  |  |  |  |  | bgendleman | 8h | 8h |
| 102 | 1.3.1.2.5.12 | UC Manage Institutional Groups (deferred) | 1d | 2007-07-10 A | 2007-07-11 A | 101 | 100% |  |  |  |  |  | bgendleman | 8h | 8h |
| 103 | 1.3.1.2.5.13 | UX Modeling/Wireframes (deferred) | 2d | 2007-07-19 A | 2007-07-20 A | 102 | 100% |  |  |  |  |  | bgendleman | 16h | 16h |
| 104 | 1.3.1.2.5.14 | Stylesheet Framework (deferred) | 2d | 2007-07-23 A | 2007-07-24 A | 103 | 100% |  |  |  |  |  | bgendleman | 16h | 16h |

| ID | WBS | Task | Duration | Start | Finish | Predecessors | Complete | Constraint | Resources | Work | Actual work |
| --- | --- | --- | --- | --- | --- | --- | --- | --- | --- | --- | --- |
| 105 | 1.3.1.3 | **Analysis and Design** | 29.7d | 2007-06-18 A | 2007-07-27 A |  | 100% |  |  | 421.64h | 421.64h |
| 106 | 1.3.1.3.1 | Targeted Use Case Analysis and Design | 10d | 2007-07-02 A | 2007-07-16 A | 76, 87 | 100% | start no earlier than 2007-05-23 | etavela [90%]; jpike | 152h | 152h |
| 107 | 1.3.1.3.2 | MIAME and MAGE-TAB Comparison | 2d | 2007-07-05 A | 2007-07-06 A |  | 100% | start no earlier than 2007-07-05 | etavela [10%]; jpike | 17.6h | 17.6h |
| 108 | 1.3.1.3.3 | Grid Strategy - Deferred | 8.53d | 2007-06-18 A | 2007-06-28 A |  | 100% |  | etavela [25%] | 17.05h | 17.05h |
| 109 | 1.3.1.3.4 | Parsing Strategy | 3d | 2007-07-16 A | 2007-07-19 A | 106 | 100% |  | etavela [90%] | 21.6h | 21.6h |
| 110 | 1.3.1.3.5 | Binary Storage | 3d | 2007-07-16 A | 2007-07-19 A | 106 | 100% |  | etavela [90%] | 21.6h | 21.6h |
| 111 | 1.3.1.3.6 | Represent SNP Data - Deferred | 3d | 2007-06-18 A | 2007-06-21 A |  | 100% | start no earlier than 2007-05-24 |  |  |  |
| 112 | 1.3.1.3.7 | Security - Deferred | 3d | 2007-07-16 A | 2007-07-19 A | 106 | 100% | start no earlier than 2007-05-29 |  |  |  |
| 113 | 1.3.1.3.8 | 1.6 Data Migration Strategy | 2d | 2007-07-16 A | 2007-07-18 A | 106 | 100% |  | etavela [90%]; smatyas [50%] | 22.4h | 22.4h |
| 114 | 1.3.1.3.9 | **Finalize Deliverables** | 21.17d | 2007-06-28 A | 2007-07-27 A |  | 100% |  |  | 169.39h | 169.39h |
| 115 | 1.3.1.3.9.1 | Update Software Architecture Document | 21.17d | 2007-06-28 A | 2007-07-27 A | 108 | 100% | finish no earlier than 2007-07-27 | etavela | 169.39h | 169.39h |
| 116 | 1.3.1.4 | **Implementation** | 19.34d | 2007-07-02 A | 2007-07-27 A |  | 100% |  |  | 236h | 236h |
| 117 | 1.3.1.4.1 | Implement UC Import Project Data | 5d | 2007-07-19 A | 2007-07-26 A | 109 | 100% |  | bmason; jpike; etavela [90%] | 70.4h | 70.4h |
| 118 | 1.3.1.4.2 | Implement UC Submit Project Proposal | 2d | 2007-07-23 A | 2007-07-24 A |  | 100% | start no earlier than 2007-07-23 | etavela [90%]; tparnell | 30.4h | 30.4h |
| 119 | 1.3.1.4.3 | Implement UC Login (incomplete) | 5d | 2007-07-02 A | 2007-07-09 A | 87 | 100% | start no earlier than 2007-06-01 | jpike | 40h | 40h |
| 120 | 1.3.1.4.4 | Implement UC Acquire Project Data via API (incomplete) | 10d | 2007-07-09 A | 2007-07-23 A | 119 | 100% |  | etavela [90%] | 72h | 72h |
| 121 | 1.3.1.4.5 | Implement UC Manage Project Data Files (to support import) | 2d | 2007-07-23 A | 2007-07-25 A | 120 | 100% |  | tparnell | 16h | 16h |
| 122 | 1.3.1.4.6 | **Finalize Deliverables** | 0.64d | 2007-07-27 A | 2007-07-27 A |  | 100% |  |  | 7.2h | 7.2h |
| 123 | 1.3.1.4.6.1 | Release Final E1 Development Build | 0.64d | 2007-07-27 A | 2007-07-27 A |  | 100% | start no earlier than 2007-07-27 | etavela [90%]; smatyas [50%] | 7.2h | 7.2h |
| 124 | 1.3.1.5 | **Test** | 9d | 2007-07-16 A | 2007-07-27 A |  | 100% |  |  | 135.2h | 135.2h |
| 125 | 1.3.1.5.1 | Create Functional Test for targeted UC's | 5d | 2007-07-16 A | 2007-07-23 A | 106 | 100% |  | jpike; etavela [90%] | 76h | 76h |
| 126 | 1.3.1.5.2 | Incorporate Test Cases into Gforge (Deferred) | 1d | 2007-07-25 A | 2007-07-25 A |  | 100% | start no earlier than 2007-07-25 | bgendleman | 8h | 8h |
| 127 | 1.3.1.5.3 | Manage Test Assets (Deferred) | 2d | 2007-07-23 A | 2007-07-25 A | 125 | 100% |  | smatyas [50%]; etavela [90%]; bgendleman [80%] | 35.2h | 35.2h |
| 128 | 1.3.1.5.4 | **Finalize Deliverables** | 2d | 2007-07-25 A | 2007-07-27 A |  | 100% |  |  | 16h | 16h |
| 129 | 1.3.1.5.4.1 | Release Test Plan (Deferred) | 2d | 2007-07-25 A | 2007-07-27 A | 127 | 100% |  | bgendleman | 16h | 16h |

Notes:
- 125: Selenium for Browser, Junit for API

| ID | WBS | Task | Type | Duration | Start | Finish | Predecessors | Complete | Baseline start | Baseline finish | Baseline duration | Constraint | Resources | Work | Actual work |
| --- | --- | --- | --- | --- | --- | --- | --- | --- | --- | --- | --- | --- | --- | --- | --- |
| 130 | 1.3.1.6 | **Environment** |  | 29.7d | 2007-06-18 A | 2007-07-27 A |  | 100% |  |  |  |  |  | 519.6h | 519.6h |
| 131 | 1.3.1.6.1 | Create and Revise ARC Document |  | 1d | 2007-07-10 A | 2007-07-10 A |  | 100% |  |  |  | start no earlier than 2007-07-10 | bgendleman | 8h | 8h |
| 132 | 1.3.1.6.2 | Work with Systems to Establish Dev and QA Boxes |  | 1d | 2007-06-18 A | 2007-07-27 A |  | 100% |  |  |  | finish no earlier than 2007-07-27 | bgendleman | 8h | 8h |
| 133 | 1.3.1.6.3 | Craft Draft Build and Deploy Plan |  | 4.2w | 2007-06-29 A | 2007-07-27 A |  | 100% |  |  |  | finish no earlier than 2007-07-27 | pduvall; aglover; smatyas [25%]; bgendleman [10%]; etavela [10%] | 411.6h | 411.6h |
| 134 | 1.3.1.6.4 | Integrate Automation Scripts to Support Dev to QA Builds |  | 1w | 2007-06-18 A | 2007-06-25 A |  | 100% |  |  |  |  | pduvall; aglover; etavela [10%] | 84h | 84h |
| 135 | 1.3.1.6.5 | Integrate Test Suite into Gforge (deferred) |  | 2d | 2007-07-25 A | 2007-07-27 A | 127 | 100% |  |  |  |  | smatyas [50%] | 8h | 8h |
| 136 | 1.3.1.7 | **Configuration and Change Management** |  | 29.7d | 2007-06-18 A | 2007-07-27 A |  | 100% |  |  |  |  |  | 403.92h | 403.92h |
| 137 | 1.3.1.7.1 | Manage Gforge Content |  | 29.7d | 2007-06-18 A | 2007-07-27 A |  | 100% |  |  |  | finish no earlier than 2007-07-27 | bgendleman [80%]; etavela [90%] | 403.92h | 403.92h |
| 138 | 1.3.1.8 | Elaboration 1 Complete | milestone | 0d | 2007-07-27 A | 2007-07-27 A | 129 | 100% |  |  |  | start no earlier than 2007-06-27 |  |  |  |
| 139 | 1.3.2 | **Elaboration - Iteration 2** |  | 29.7d | 2007-07-27 A | 2007-09-06 A | 138 | 100% | 2007-05-15 | 2007-05-16 | 1d? |  |  | 2938.4h | 2938.4h |
| 140 | 1.3.2.1 | **Project Management** |  | 28.7d | 2007-07-27 A | 2007-09-05 A |  | 100% |  |  |  |  | bgendleman | 1019.2h | 1019.2h |
| 141 | 1.3.2.1.1 | Dev Team Iteration Plan |  | 1d | 2007-07-31 A | 2007-07-31 A |  | 100% |  |  |  | start no earlier than 2007-07-31 | bgendleman; etavela [90%]; smatyas [50%]; bmason; tparnell | 35.2h | 35.2h |
| 142 | 1.3.2.1.2 | E1 Assessment |  | 0.5d | 2007-07-30 A | 2007-07-30 A |  | 100% |  |  |  |  | bgendleman; etavela [90%] | 4h | 4h |
| 143 | 1.3.2.1.3 | E2 Review - formal review not executed |  | 1d | 2007-08-24 A | 2007-08-24 A |  | 100% |  |  |  | start no earlier than 2007-08-24 | bgendleman | 8h | 8h |
| 144 | 1.3.2.1.4 | Weekly Status Meetings |  | 3d | 2007-08-01 A | 2007-09-05 A |  | 100% |  |  |  | finish no earlier than 2007-09-05 | bgendleman | 24h | 24h |
| 145 | 1.3.2.1.5 | Hold Dev to QA Handoff |  | 2d | 2007-08-16 A | 2007-08-17 A |  | 100% |  |  |  | start no earlier than 2007-08-16 | bgendleman [80%]; smatyas [50%]; etavela [90%]; pduvall | 51.2h | 51.2h |
| 146 | 1.3.2.1.6 | Plan for Next Iteration |  | 2d | 2007-08-24 A | 2007-08-27 A |  | 100% |  |  |  | start no earlier than 2007-08-24 | bgendleman | 16h | 16h |
| 147 | 1.3.2.1.7 | **Finalize Deliverables** |  | 22.7d | 2007-07-27 A | 2007-08-28 A |  | 100% |  |  |  |  | bgendleman | 656.8h | 656.8h |
| 148 | 1.3.2.1.7.1 | Deliver E2 Plan |  | 3d | 2007-07-27 A | 2007-08-01 A |  | 100% |  |  |  |  | bgendleman | 24h | 24h |
| 149 | 1.3.2.1.7.2 | Update Risk List |  | 10d | 2007-07-30 A | 2007-08-10 A |  | 100% |  |  |  | finish no earlier than 2007-08-10 | bgendleman | 80h | 80h |
| 150 | 1.3.2.1.7.3 | Establish Plan for Alpha and Beta Releases |  | 17d | 2007-08-06 A | 2007-08-28 A |  | 100% |  |  |  | start no earlier than 2007-08-06 | bgendleman [80%]; etavela [90%] | 231.2h | 231.2h |
| 151 | 1.3.2.1.7.4 | July Status Report |  | 0.5d | 2007-08-17 A | 2007-08-17 A |  | 100% |  |  |  | finish no earlier than 2007-08-17 | bgendleman | 4h | 4h |
| 152 | 1.3.2.1.7.5 | Finalize C1 Iteration Plans |  | 17d | 2007-08-03 A | 2007-08-27 A |  | 100% |  |  |  | start no earlier than 2007-08-03 | bgendleman | 136h | 136h |
| 153 | 1.3.2.2 | **Requirements** |  | 29.7d | 2007-07-27 A | 2007-09-06 A |  | 100% |  |  |  |  |  | 509.6h | 509.6h |
| 154 | 1.3.2.2.1 | Incorporate Stakeholder Feedback on Vision and Supp Spec |  | 16d | 2007-08-01 A | 2007-08-22 A |  | 100% |  |  |  | start no earlier than 2007-08-01 | bgendleman | 128h | 128h |
| 155 | 1.3.2.2.2 | Incorporate Stakeholder Feedback on E1 Use Cases |  | 25.7d | 2007-07-27 A | 2007-08-31 A |  | 100% |  |  |  | finish no earlier than 2007-08-31 | bgendleman | 205.6h | 205.6h |
| 156 | 1.3.2.2.3 | UX Modeling/Wireframes (from E1 deferred) |  | 10d | 2007-08-13 A | 2007-08-24 A | 160 | 100% |  |  |  |  | bgendleman [50%] | 40h | 40h |
| 157 | 1.3.2.2.4 | UI Mockups for Prioritized Use Cases |  | 4d | 2007-08-27 A | 2007-08-30 A | 156 | 100% |  |  |  |  | bgendleman [50%] | 16h | 16h |
| 158 | 1.3.2.2.5 | Stylesheet Framework (from E1 deferred) |  | 5d | 2007-08-31 A | 2007-09-06 A | 157 | 100% |  |  |  |  | bgendleman [80%] | 32h | 32h |
| 159 | 1.3.2.2.6 | Capture Special Requirements for SNPs |  | 4.17d | 2007-08-30 A | 2007-09-05 A |  | 100% |  |  |  | start no earlier than 2007-08-02 | bgendleman; bmason | 40h | 40h |

Notes:
- 156: Validate Project Data Files / Manage Project Permissions
- 159: What's different about SNP domain model / SNP Vocabulary (where do SNP terms, experiment types)

| ID | WBS | Task | Duration | Start | Finish | Predecessors | Complete | Constraint | Resources | Work | Actual work |
| --- | --- | --- | --- | --- | --- | --- | --- | --- | --- | --- | --- |
| 160 | 1.3.2.2.7 | **Detail E2 Use Cases** | 3d | 2007-08-03 A | 2007-08-07 A |  | 100% |  | bgendleman | 48h | 48h |
| 161 | 1.3.2.2.7.1 | UC Download Project Data (from E1 deferred) | 0.5d | 2007-08-03 A | 2007-08-03 A |  | 100% | start no earlier than 2007-08-03 | bgendleman | 4h | 4h |
| 162 | 1.3.2.2.7.2 | UC Manage Users | 0.5d | 2007-08-03 A | 2007-08-03 A | 161 | 100% |  | bgendleman | 4h | 4h |
| 163 | 1.3.2.2.7.3 | Validate Project Data Files: Define Validation Rules | 1d | 2007-08-06 A | 2007-08-06 A | 162 | 100% | start no earlier than 2007-08-03 | bgendleman | 8h | 8h |
| 164 | 1.3.2.2.7.4 | UC Manage Project Permissions | 1d | 2007-08-07 A | 2007-08-07 A | 163 | 100% | start no earlier than 2007-08-02 | bgendleman | 8h | 8h |
| 165 | 1.3.2.2.8 | **Detail C1 Use Cases** | 3d | 2007-08-08 A | 2007-08-10 A | 160 | 100% |  |  |  |  |
| 166 | 1.3.2.2.8.1 | UC Navigate Repository | 1d | 2007-08-08 A | 2007-08-08 A |  | 100% |  |  |  |  |
| 167 | 1.3.2.2.8.2 | UC Search Repository | 1d | 2007-08-09 A | 2007-08-09 A | 166 | 100% |  |  |  |  |
| 168 | 1.3.2.2.8.3 | UC Search Using Filters | 1d | 2007-08-10 A | 2007-08-10 A | 167 | 100% |  |  |  |  |
| 169 | 1.3.2.3 | **Analysis and Design** | 27.7d | 2007-07-27 A | 2007-09-04 A |  | 100% |  |  | 390.4h | 390.4h |
| 170 | 1.3.2.3.1 | Logical Model Final Draft | 2d | 2007-08-06 A | 2007-08-07 A | 194 | 100% |  |  |  |  |
| 171 | 1.3.2.3.2 | Harmonization of Model with caBIG | 20d | 2007-08-08 A | 2007-09-04 A | 170 | 100% |  | etavela [80%] | 128h | 128h |
| 172 | 1.3.2.3.3 | External Review: Grid API | 1d | 2007-08-14 A | 2007-08-14 A | 182 | 100% |  | etavela; jpike | 16h | 16h |
| 173 | 1.3.2.3.4 | **Use-Case Design** | 6.2d | 2007-08-06 A | 2007-08-14 A |  | 100% |  |  | 40h | 40h |
| 174 | 1.3.2.3.4.1 | Manage Project Permissions (Deferred) | 3d | 2007-08-08 A | 2007-08-13 A | 227 | 100% | start no earlier than 2007-08-06 | etavela | 24h | 24h |
| 175 | 1.3.2.3.4.2 | Validate Project Data Files | 1d | 2007-08-13 A | 2007-08-14 A | 174 | 100% |  | etavela | 8h | 8h |
| 176 | 1.3.2.3.4.3 | Login | 0.56d | 2007-08-06 A | 2007-08-06 A |  | 100% | start no earlier than 2007-08-06 | etavela [80%]; tparnell | 8h | 8h |
| 177 | 1.3.2.3.5 | **Subsystem Design** | 19.7d | 2007-07-27 A | 2007-08-23 A |  | 100% |  |  | 184h | 184h |
| 178 | 1.3.2.3.5.1 | FileAccessService | 2.58d | 2007-08-07 A | 2007-08-09 A | 176 | 100% |  | jpike; etavela [80%] | 32h | 32h |
| 179 | 1.3.2.3.5.2 | MageTabParser: Validation | 4d | 2007-08-06 A | 2007-08-09 A | 193 | 100% |  | bmason | 32h | 32h |
| 180 | 1.3.2.3.5.3 | ArrayDataService: Validation | 2d | 2007-08-10 A | 2007-08-13 A | 179 | 100% |  | bmason | 16h | 16h |
| 181 | 1.3.2.3.5.4 | ArrayDesignService: Validation | 2d | 2007-08-14 A | 2007-08-15 A | 180 | 100% |  | bmason | 16h | 16h |
| 182 | 1.3.2.3.5.5 | Remote API Grid Implementation (90% Complete) | 4d | 2007-08-08 A | 2007-08-13 A | 170 | 100% |  | tparnell | 32h | 32h |
| 183 | 1.3.2.3.5.6 | PermissionsManagementService (Deferred) | 3d | 2007-07-27 A | 2007-08-01 A |  | 100% |  | tparnell | 24h | 24h |
| 184 | 1.3.2.3.5.7 | Authorization Mechanism (Deferred) | 4d | 2007-08-20 A | 2007-08-23 A |  | 100% | start no earlier than 2007-08-20 | tparnell | 32h | 32h |

Notes:
- 163: Validation rules for: / MAGE-TAB (all) / Affymetrix CDF, CHP, CEL / Illumina design and data files / Genepix GPR and GAL
- 182: attended a a day and a half meeting
- 183: csm meeting needed / no csm integration / potential dependency on login and authentication

| ID | WBS | Task | Type | Duration | Start | Finish | Predecessors | Complete | Constraint | Resources | Work | Actual work |
| --- | --- | --- | --- | --- | --- | --- | --- | --- | --- | --- | --- | --- |
| 185 | 1.3.2.3.6 | **Finalize Deliverables** |  | 24.7d | 2007-07-27 A | 2007-08-30 A |  | 100% |  |  | 22.4h | 22.4h |
| 186 | 1.3.2.3.6.1 | Update Software Architecture Document (Deferred to C1) |  | 2d | 2007-08-29 A | 2007-08-30 A | 181 | 100% | start no earlier than 2007-08-29 | etavela | 16h | 16h |
| 187 | 1.3.2.3.6.2 | Create caArray GRID Document (Deferred to C1) |  | 1d | 2007-08-30 A | 2007-08-30 A |  | 100% | start no earlier than 2007-08-30 | etavela [80%] | 6.4h | 6.4h |
| 188 | 1.3.2.3.6.3 | Update Supplemental Specification (Partial) |  | 1d | 2007-07-27 A | 2007-07-30 A |  | 100% |  |  |  |  |
| 189 | 1.3.2.4 | **Implementation** |  | 27d | 2007-08-01 A | 2007-09-06 A |  | 100% |  |  | 639.6h | 639.6h |
| 190 | 1.3.2.4.1 | **E1 Completion** |  | 10d | 2007-08-01 A | 2007-08-14 A |  | 100% |  |  | 176h | 176h |
| 191 | 1.3.2.4.1.1 | Complete Hibernate Mappings |  | 10d | 2007-08-01 A | 2007-08-14 A |  | 100% | start no earlier than 2007-08-01 | tparnell | 80h | 80h |
| 192 | 1.3.2.4.1.2 | Remote Java API |  | 4.2d | 2007-08-01 A | 2007-08-07 A |  | 100% | start no earlier than 2007-08-01 | etavela; tparnell | 48h | 48h |
| 193 | 1.3.2.4.1.3 | Complete MAGE-TAB parsing |  | 3d | 2007-08-01 A | 2007-08-03 A |  | 100% | start no earlier than 2007-08-01 | bmason | 24h | 24h |
| 194 | 1.3.2.4.1.4 | Complete MAGE-TAB translation |  | 3d | 2007-08-01 A | 2007-08-03 A |  | 100% | start no earlier than 2007-08-01 | bmason | 24h | 24h |
| 195 | 1.3.2.4.2 | **Subsystem Implementation** |  | 18d | 2007-08-13 A | 2007-09-05 A |  | 100% |  |  | 356.4h | 356.4h |
| 196 | 1.3.2.4.2.1 | FileAccessService |  | 1d | 2007-08-21 A | 2007-08-21 A |  | 100% | start no earlier than 2007-08-21 | etavela [80%] | 6.4h | 6.4h |
| 197 | 1.3.2.4.2.2 | MageTabParser: Validation |  | 5d | 2007-08-16 A | 2007-08-22 A | 181 | 100% |  | bmason | 40h | 40h |
| 198 | 1.3.2.4.2.3 | ArrayDataService: Validation |  | 3d | 2007-08-23 A | 2007-08-27 A | 197 | 100% |  | bmason | 24h | 24h |
| 199 | 1.3.2.4.2.4 | ArrayDesignService: Validation |  | 2d | 2007-08-15 A | 2007-08-16 A | 198 | 100% |  | bmason | 16h | 16h |
| 200 | 1.3.2.4.2.5 | PermissionsManagement (deferred) |  | 5d | 2007-08-24 A | 2007-08-30 A | 184 | 100% | start no earlier than 2007-08-20 | tparnell | 40h | 40h |
| 201 | 1.3.2.4.2.6 | Object Access Authorization Mechanism (deferred) |  | 2d | 2007-08-31 A | 2007-09-03 A | 200 | 100% |  | tparnell; etavela | 32h | 32h |
| 202 | 1.3.2.4.2.7 | Remote API Grid Implementation (expanded scope) |  | 18d | 2007-08-13 A | 2007-09-05 A |  | 100% | start no earlier than 2007-08-13 | tparnell; smatyas [50%] | 198h | 198h |
| 203 | 1.3.2.4.3 | **Implement Use Cases** |  | 14d | 2007-08-20 A | 2007-09-06 A |  | 100% |  |  | 60.8h | 60.8h |
| 204 | 1.3.2.4.3.1 | Manage Project Permissions (deferred) | milestone | 0d | 2007-09-03 A | 2007-09-03 A | 220, 200 | 100% | start no earlier than 2007-08-28 | bmason |  |  |
| 205 | 1.3.2.4.3.2 | Validate Project Data Files |  | 2d | 2007-09-05 A | 2007-09-06 A | 204 | 100% |  | etavela; bmason | 32h | 32h |
| 206 | 1.3.2.4.3.3 | Login |  | 2d | 2007-08-20 A | 2007-08-21 A |  | 100% | start no earlier than 2007-08-20 | tparnell; etavela [80%] | 28.8h | 28.8h |
| 207 | 1.3.2.4.4 | **Implement Additional Array Design Parsers** |  | 3.5d | 2007-08-31 A | 2007-09-05 A |  | 100% |  |  | 24h | 24h |
| 208 | 1.3.2.4.4.1 | Illumina (deferred) | milestone | 0d | 2007-08-31 A | 2007-08-31 A | 196 | 100% |  |  |  |  |
| 209 | 1.3.2.4.4.2 | Affymetrix SNP (CEL & CHP -deferred) |  | 3d | 2007-08-31 A | 2007-09-05 A | 199, 204 | 100% | start no earlier than 2007-08-27 | bmason | 24h | 24h |

Notes:
- 192: doesn't contain file retrieval
- 201: 4.0 provides most of this - 3.2 does NOT - BIG DEAL
- 202: model changes will impact this completion - lots of churn: caCORE, castor 0.9.9, SDK Serializer code, and introduce
- 203: The bulk of the implementation work is in the Subsystems -- this is the front end code to tie functionality together

| ID | WBS | Task | Type | Duration | Start | Finish | Predecessors | Complete | Remaining | Baseline start | Baseline finish | Baseline duration | Total slack | Free slack | Constraint | Resources | Work | Actual work |
| --- | --- | --- | --- | --- | --- | --- | --- | --- | --- | --- | --- | --- | --- | --- | --- | --- | --- | --- |
| 210 | 1.3.2.4.5 | **Implement Additional Array Data Parsers** |  | 5d | 2007-08-30 A | 2007-09-06 A |  | 100% |  |  |  |  |  |  |  |  | 22.4h | 22.4h |
| 211 | 1.3.2.4.5.1 | Illumina (deferred) | milestone | 0d | 2007-09-06 A | 2007-09-06 A | 209 | 100% |  |  |  |  |  |  | start no earlier than 2007-08-22 |  |  |  |
| 212 | 1.3.2.4.5.2 | Affymetrix SNP (CEL & CHP) - deferred |  | 2d | 2007-09-03 A | 2007-09-04 A |  | 100% |  |  |  |  |  |  | start no earlier than 2007-09-03 | bmason | 16h | 16h |
| 213 | 1.3.2.4.5.3 | Affymetrix Gene Expression CHP |  | 1d | 2007-08-30 A | 2007-08-30 A |  | 100% |  |  |  |  |  |  | start no earlier than 2007-08-30 | etavela [80%] | 6.4h | 6.4h |
| 214 | 1.3.2.5 | **Test** |  | 15d | 2007-08-17 A | 2007-09-06 A |  | 100% |  |  |  |  |  |  |  |  | 109.2h | 109.2h |
| 215 | 1.3.2.5.1 | Validate Project Data Files Test Cases |  | 2d | 2007-09-04 A | 2007-09-05 A | 206 | 100% |  |  |  |  |  |  |  | etavela; bmason | 8.4h | 8.4h |
| 216 | 1.3.2.5.2 | Manage Permission Test Cases (deferred) |  | 1d | 2007-08-23 A | 2007-08-23 A | 215 | 100% |  |  |  |  |  |  |  | etavela | 8h | 8h |
| 217 | 1.3.2.5.3 | Import Data Files Test Suite |  | 2d | 2007-08-31 A | 2007-09-03 A | 216 | 100% |  |  |  |  |  |  |  | etavela; bmason | 8.8h | 8.8h |
| 218 | 1.3.2.5.4 | Remote Java API Test Suite (deferred) |  | 3d | 2007-09-04 A | 2007-09-06 A | 217 | 100% |  |  |  |  |  |  |  | smatyas [75%]; etavela [150%] | 48h | 48h |
| 219 | 1.3.2.5.5 | **Finalize Deliverables** |  | 12d | 2007-08-17 A | 2007-09-03 A |  | 100% |  |  |  |  |  |  |  |  | 36h | 36h |
| 220 | 1.3.2.5.5.1 | Release Test Plan |  | 2d | 2007-08-31 A | 2007-09-03 A | 175 | 100% |  |  |  |  |  |  |  | etavela; bgendleman [50%]; bmason; tparnell | 36h | 36h |
| 221 | 1.3.2.5.5.2 | Release Build R2_0_0_QA1 | milestone | 0d | 2007-08-17 A | 2007-08-17 A |  | 100% |  |  |  |  |  |  | start no earlier than 2007-08-17 |  |  |  |
| 222 | 1.3.2.5.5.3 | Release Build R2_0_0_QA2 | milestone | 0d | 2007-08-31 A | 2007-08-31 A |  | 100% |  |  |  |  |  |  | start no earlier than 2007-08-31 |  |  |  |
| 223 | 1.3.2.6 | **Environment** |  | 12d | 2007-08-01 A | 2007-08-16 A |  | 100% |  |  |  |  |  |  |  |  | 70.4h | 70.4h |
| 224 | 1.3.2.6.1 | Review Build and Deploy Plan with SCM Initiative |  | 0.4d | 2007-08-01 A | 2007-08-01 A |  | 100% |  |  |  |  |  |  | start no earlier than 2007-08-01 | aglover; pduvall | 6.4h | 6.4h |
| 225 | 1.3.2.6.2 | Review and Demonstration Meetings (Eng + Prod / QA / Systems |  | 3d | 2007-08-01 A | 2007-08-06 A | 224 | 100% |  |  |  |  |  |  |  |  |  |  |
| 226 | 1.3.2.6.3 | Complete Acquisition of DEV and QA Environment |  | 2d | 2007-08-02 A | 2007-08-03 A |  | 100% |  |  |  |  |  |  | finish no earlier than 2007-08-02 |  |  |  |
| 227 | 1.3.2.6.4 | Development Process "Quick Start" |  | 1d | 2007-08-07 A | 2007-08-08 A | 192 | 100% |  |  |  |  |  |  |  | etavela | 8h | 8h |
| 228 | 1.3.2.6.5 | Complete DEV to QA Integration |  | 3d | 2007-08-07 A | 2007-08-09 A | 226 | 100% |  |  |  |  |  |  | finish no earlier than 2007-08-09 | aglover; pduvall | 48h | 48h |
| 229 | 1.3.2.6.6 | Incorporate Automated Deployment Process |  | 2d | 2007-08-15 A | 2007-08-16 A | 228 | 100% |  |  |  |  |  |  | finish no earlier than 2007-08-16 | smatyas [50%] | 8h | 8h |
| 230 | 1.3.2.7 | **Configuration and Change Management** |  | 25d | 2007-07-27 A | 2007-08-31 A |  | 100% |  |  |  |  |  |  |  |  | 200h | 200h |
| 231 | 1.3.2.7.1 | Manage Gforge Content |  | 25d | 2007-07-27 A | 2007-08-31 A |  | 100% |  |  |  |  |  |  |  | bgendleman | 200h | 200h |
| 232 | 1.3.2.8 | Elaboration 2 Complete | milestone | 0d | 2007-09-06 A | 2007-09-06 A | 202, 211 | 100% |  |  |  |  |  |  | start no earlier than 2007-09-06 |  |  |  |
| 233 | 1.4 | **Construction Phase** |  | 54d | 2007-09-07 A | 2007-11-21 | 73 | 64% | 19.32d | 2007-05-17 | 2007-05-18 | 1d? | -13d | 0d |  |  | 6159.11h | 4095.56h |
| 234 | 1.4.1 | **Construction - Iteration 1** |  | 21d | 2007-09-07 A | 2007-10-05 | 232 | 86% | 2.98d | 2007-05-17 | 2007-05-18 | 1d? | 0d |  |  |  | 2726.4h | 2433.16h |
| 235 | 1.4.1.1 | **Project Management** |  | 21d | 2007-09-07 A | 2007-10-05 |  | 97% | 0.55d |  |  |  | 0d |  |  |  | 846.8h | 833.6h |
| 236 | 1.4.1.1.1 | Weekly Status Meetings |  | 21d | 2007-09-07 A | 2007-10-05 A |  | 100% |  |  |  |  |  |  |  | bgendleman [50%]; bmason; etavela [80%] | 386.4h | 386.4h |
| 237 | 1.4.1.1.2 | Dev Team Iteration Plan |  | 1d | 2007-09-14 A | 2007-09-14 A |  | 100% |  |  |  |  |  |  | finish no earlier than 2007-09-14 | bgendleman [50%]; bmason | 12h | 12h |
| 238 | 1.4.1.1.3 | Meet with Documentation to support UC Transition |  | 1d | 2007-09-19 A | 2007-09-19 | 237 | 50% | 0.5d |  |  |  | -48d | 0d | start no earlier than 2007-09-19 | bgendleman [50%] | 4h | 2h |
| 239 | 1.4.1.1.4 | Meet with App Support to Validate UC's and Overall Product Releases |  | 1d | 2007-09-20 A | 2007-09-20 | 238 | 50% | 0.5d |  |  |  | -49.5d | 0d |  | bgendleman [50%] | 4h | 2h |
| 240 | 1.4.1.1.5 | E2 Assessment/C1 Review |  | 0.5d | 2007-09-21 | 2007-09-21 | 239 |  |  |  |  |  | -49.5d | 0d |  | bgendleman [50%]; bmason; etavela [80%] | 9.2h |  |
| 241 | 1.4.1.1.6 | Plan for Next Iteration |  | 2d | 2007-10-01 A | 2007-10-02 A |  | 100% |  |  |  |  |  |  | start no earlier than 2007-10-01 |  |  |  |

| ID | WBS | Task | Duration | Start | Finish | Predecessors | Complete | Remaining | Total slack | Free slack | Constraint | Resources | Work | Actual work |
| --- | --- | --- | --- | --- | --- | --- | --- | --- | --- | --- | --- | --- | --- | --- |
| 242 | 1.4.1.1.7 | **Finalize Deliverables** | 17d | 2007-09-07 A | 2007-10-01 A |  | 100% |  |  |  |  |  | 431.2h | 431.2h |
| 243 | 1.4.1.1.7.1 | Deliver C1 Plan | 4d | 2007-09-07 A | 2007-09-12 A |  | 100% |  |  |  |  | bgendleman; bmason | 52h | 52h |
| 244 | 1.4.1.1.7.2 | Update Risk List | 1d | 2007-09-20 A | 2007-09-20 A |  | 100% |  |  |  | finish no earlier than 2007-09-20 | bgendleman | 8h | 8h |
| 245 | 1.4.1.1.7.3 | Update Alpha and Beta Release Plan | 17d | 2007-09-07 A | 2007-10-01 A |  | 100% |  |  |  | start no earlier than 2007-08-03 | bgendleman [80%]; etavela [90%] | 231.2h | 231.2h |
| 246 | 1.4.1.1.7.4 | August Status Report | 0.5d | 2007-09-17 A | 2007-09-17 A |  | 100% |  |  |  | start no earlier than 2007-09-17 | bgendleman | 4h | 4h |
| 247 | 1.4.1.1.7.5 | Finalize C2 Iteration Plans | 8.5d | 2007-09-07 A | 2007-09-19 A |  | 100% |  |  |  | start no earlier than 2007-08-03 | bgendleman; bmason | 136h | 136h |
| 248 | 1.4.1.2 | **Requirements** | 20d | 2007-09-07 A | 2007-10-04 |  | 82% | 3.52d | 0d |  |  |  | 496h | 462h |
| 249 | 1.4.1.2.1 | Incorporate Stakeholder Feedback on Vision and Supp Spec | 16d | 2007-09-07 A | 2007-09-28 A |  | 100% |  |  |  | start no earlier than 2007-08-01 | bgendleman | 128h | 128h |
| 250 | 1.4.1.2.2 | Incorporate Stakeholder Feedback on E2 Use Cases | 16d | 2007-09-07 A | 2007-09-28 A |  | 100% |  |  |  |  | bgendleman | 128h | 128h |
| 251 | 1.4.1.2.3 | Incorporate Stakeholder Feedback on UI Mockups | 10d | 2007-09-21 A | 2007-10-04 A |  | 100% |  |  |  | start no earlier than 2007-09-21 | bgendleman [50%]; mrehfuss | 80h | 80h |
| 252 | 1.4.1.2.4 | Update and Create C1 + C2 Wireframes and Mockups | 15d | 2007-09-07 A | 2007-09-27 |  | 80% | 3d | -54d | 0d |  | mrehfuss | 120h | 96h |
| 253 | 1.4.1.2.5 | Capture Special Requirements for SNPs | 4.17d | 2007-09-07 A | 2007-09-13 |  | 80% | 0.83d | -43.17d | 0d | start no earlier than 2007-08-02 | bgendleman; bmason | 40h | 30h |
| 254 | 1.4.1.2.6 | 2.0 Scope Document | 2d | 2007-09-21 A | 2007-09-24 A |  | 100% |  |  |  | start no earlier than 2007-09-21 |  |  |  |
| 255 | 1.4.1.2.7 | **Detail C1 Use Cases** | 2.5d | 2007-09-10 A | 2007-09-12 A |  | 100% |  |  |  |  |  |  |  |
| 256 | 1.4.1.2.7.1 | UC Update Project Proposal | 0.5d | 2007-09-10 A | 2007-09-10 A |  | 100% |  |  |  |  |  |  |  |
| 257 | 1.4.1.2.7.2 | UC Register For An Account | 1d | 2007-09-10 A | 2007-09-11 A | 256 | 100% |  |  |  |  |  |  |  |
| 258 | 1.4.1.2.7.3 | UC Manage Collaborators | 1d | 2007-09-11 A | 2007-09-12 A | 257 | 100% |  |  |  |  |  |  |  |
| 259 | 1.4.1.2.8 | **Detail 2.x Use Cases** | 9d | 2007-09-12 A | 2007-09-25 | 255 | 5% | 8.55d | -3d | 0d |  |  |  |  |
| 260 | 1.4.1.2.8.1 | UC Manage Institutions | 1d | 2007-09-12 | 2007-09-13 |  |  |  | -43.5d | 0d |  |  |  |  |
| 261 | 1.4.1.2.8.2 | UC Organize Workspace | 5d | 2007-09-12 | 2007-09-19 |  |  |  | -48d | 0d |  |  |  |  |
| 262 | 1.4.1.2.8.3 | UC Approve Experiment | 0.5d | 2007-09-19 | 2007-09-19 | 261 |  |  | -48d | 0d |  |  |  |  |
| 263 | 1.4.1.2.8.4 | UC Assign Experiment | 0.5d | 2007-09-20 A | 2007-09-20 A | 262 | 100% |  |  |  |  |  |  |  |
| 264 | 1.4.1.2.8.5 | UC Search for Arrays Using Natural Text | 2d | 2007-09-20 | 2007-09-24 | 263 |  |  | -51.5d | 0d |  |  |  |  |
| 265 | 1.4.1.2.8.6 | UC Import Contextual Data | 1d | 2007-09-24 | 2007-09-25 | 264 |  |  | -51.5d | 0d |  |  |  |  |

Notes:
- 253: What's different about SNP domain model / SNP Vocabulary (where do SNP terms, experiment types)

| ID | WBS | Task | Duration | Start | Finish | Predecessors | Complete | Remaining | Total slack | Free slack | Constraint | Resources | Work | Actual work |
| --- | --- | --- | --- | --- | --- | --- | --- | --- | --- | --- | --- | --- | --- | --- |
| 266 | 1.4.1.3 | **Analysis and Design** | 21d | 2007-09-07 A | 2007-10-05 |  | 87% | 2.66d | 0d |  |  |  | 384.8h | 338.56h |
| 267 | 1.4.1.3.1 | **Use Case Design** | 7d | 2007-09-10 A | 2007-09-18 |  | 57% | 3.01d | 0d |  |  |  | 96h | 68h |
| 268 | 1.4.1.3.1.1 | Manage Experiment Permissions | 2.14d | 2007-09-10 A | 2007-09-12 A |  | 100% |  |  |  | start no earlier than 2007-09-10 | tparnell; dkokotov; etavela [80%] | 48h | 48h |
| 269 | 1.4.1.3.1.2 | Register for an Account | 1d | 2007-09-13 | 2007-09-13 | 257, 276 |  |  | -44d | 0d |  | tparnell | 8h |  |
| 270 | 1.4.1.3.1.3 | Navigate Repository | 1d | 2007-09-14 A | 2007-09-14 A | 269 | 100% |  |  |  |  | bmason | 8h | 8h |
| 271 | 1.4.1.3.1.4 | Search | 1d | 2007-09-17 A | 2007-09-17 A | 270 | 100% |  |  |  |  | bmason | 8h | 8h |
| 272 | 1.4.1.3.1.5 | Manage Collaborators | 1d | 2007-09-18 A | 2007-09-18 | 258, 271 | 50% | 0.5d | -49d | 0d |  | tparnell | 8h | 4h |
| 273 | 1.4.1.3.1.6 | Manage Users | 2d | 2007-09-17 | 2007-09-18 |  |  |  | -47d | 0d | start no earlier than 2007-09-17 | etavela | 16h |  |
| 274 | 1.4.1.3.2 | **Finalize SubSystem Design** | 4d | 2007-09-07 A | 2007-09-12 A |  | 100% |  |  |  |  |  | 32h | 32h |
| 275 | 1.4.1.3.2.1 | PermissionsManagementService | 3d | 2007-09-07 A | 2007-09-11 A |  | 100% |  |  |  |  | tparnell | 24h | 24h |
| 276 | 1.4.1.3.2.2 | Authorization Mechanism | 1d | 2007-09-12 A | 2007-09-12 A | 275 | 100% |  |  |  |  | tparnell | 8h | 8h |
| 277 | 1.4.1.3.3 | Revise and Document Grid API | 3d | 2007-09-07 A | 2007-09-11 A |  | 100% |  |  |  |  | etavela; tparnell | 48h | 48h |
| 278 | 1.4.1.3.4 | External Review: Revised Grid API | 6d | 2007-09-28 A | 2007-10-05 |  | 80% | 1.2d | -60d | 0d | start no earlier than 2007-09-24 | etavela [90%]; tparnell | 91.2h | 72.96h |
| 279 | 1.4.1.3.5 | Revise Domain Object Model w/Mentor | 3d | 2007-09-24 A | 2007-09-27 A | 278 | 100% |  |  |  | start no earlier than 2007-09-19 | etavela | 24h | 24h |
| 280 | 1.4.1.3.6 | Update Software Architecture Document | 13d | 2007-09-19 A | 2007-10-05 A |  | 100% |  |  |  | start no earlier than 2007-09-19 | etavela [90%] | 93.6h | 93.6h |
| 281 | 1.4.1.4 | **Implementation** | 21d | 2007-09-07 A | 2007-10-05 |  | 77% | 4.75d | 0d |  |  |  | 692h | 544h |
| 282 | 1.4.1.4.1 | Complete Transition from JSF to Struts 2 (task doubled) | 15d | 2007-09-07 A | 2007-09-27 A |  | 100% |  |  |  |  | jhedden | 120h | 120h |
| 283 | 1.4.1.4.2 | **Complete Elaboration Use Cases** | 15d | 2007-09-07 A | 2007-09-27 |  | 62% | 5.68d | -2d | 0d |  |  | 248h | 168.8h |
| 284 | 1.4.1.4.2.1 | Implement UC Login | 1d | 2007-09-07 A | 2007-09-07 A |  | 100% |  |  |  |  | jhedden | 8h | 8h |
| 285 | 1.4.1.4.2.2 | Implement UC Acquire Experiment Data via API | 2d | 2007-09-07 A | 2007-09-10 |  | 90% | 0.2d | -41d | 0d |  | tparnell [50%] | 8h | 7.2h |
| 286 | 1.4.1.4.2.3 | Implement UC Import Experiment Data | 3d | 2007-09-13 A | 2007-09-17 A |  | 100% |  |  |  | start no earlier than 2007-09-13 | bmason | 24h | 24h |
| 287 | 1.4.1.4.2.4 | Implement Validate Experiment Data | 2d | 2007-09-24 A | 2007-09-25 A |  | 100% |  |  |  | start no earlier than 2007-09-24 | bmason [50%] | 8h | 8h |
| 288 | 1.4.1.4.2.5 | Integrate Stylesheet Throughout | 5d | 2007-09-18 A | 2007-09-24 | 274, 293 | 80% | 1d | -54d | 0d |  | bmason; tparnell; etavela [80%]; jhedden | 152h | 121.6h |
| 289 | 1.4.1.4.2.6 | Implement UC Manage Project Data Files (to support sample to file allocation) | 3d | 2007-09-25 | 2007-09-27 | 288 |  |  | -54d | 0d |  | jhedden | 24h |  |
| 290 | 1.4.1.4.2.7 | Implement UC Submit Project Proposal | 3d | 2007-09-24 | 2007-09-26 |  |  |  | -53d | 0d | start no earlier than 2007-09-24 | etavela | 24h |  |

| ID | WBS | Task | Type | Duration | Start | Finish | Predecessors | Complete | Remaining | Total slack | Free slack | Constraint | Resources | Work | Actual work |
| --- | --- | --- | --- | --- | --- | --- | --- | --- | --- | --- | --- | --- | --- | --- | --- |
| 291 | 1.4.1.4.3 | **Begin C1 Use Cases** |  | 20d | 2007-09-10 A | 2007-10-05 |  | 77% | 4.62d | 0d |  |  |  | 240h | 192h |
| 292 | 1.4.1.4.3.1 | Manage Experiment Permissions |  | 20d | 2007-09-10 A | 2007-10-05 A |  | 100% |  |  |  | finish no earlier than 2007-10-05 | dkokotov; tparnell [20%] | 192h | 192h |
| 293 | 1.4.1.4.3.2 | Manage Users |  | 2d | 2007-09-14 | 2007-09-17 |  |  |  | -46d | 0d | start no earlier than 2007-09-14 | tparnell | 16h |  |
| 294 | 1.4.1.4.3.3 | Manage Collaborators |  | 2d | 2007-09-19 | 2007-09-20 | 295, 272 |  |  | -49d | 0d |  | tparnell | 16h |  |
| 295 | 1.4.1.4.3.4 | Register for an Account |  | 2d | 2007-09-17 | 2007-09-18 |  |  |  | -49d | 0d | start no earlier than 2007-09-17 | tparnell | 16h |  |
| 296 | 1.4.1.4.4 | **Complete Subsystem Implementation** |  | 5d | 2007-09-07 A | 2007-09-13 |  | 73% | 1.33d | 0d |  |  |  | 84h | 63.2h |
| 297 | 1.4.1.4.4.1 | PermissionsManagement |  | 2d | 2007-09-10 A | 2007-09-11 |  | 90% | 0.2d | -42d | 0d | start no earlier than 2007-09-10 | tparnell; dkokotov | 28h | 24.8h |
| 298 | 1.4.1.4.4.2 | Object Access Authorization Mechanism |  | 2d | 2007-09-07 A | 2007-09-10 |  | 90% | 0.2d | -41d | 0d |  | tparnell | 16h | 14.4h |
| 299 | 1.4.1.4.4.3 | Remote API Grid Implementation |  | 5d | 2007-09-07 A | 2007-09-13 |  | 60% | 2d | -44d | 0d |  | tparnell | 40h | 24h |
| 300 | 1.4.1.5 | **Test** |  | 19d | 2007-09-10 A | 2007-10-05 |  | 75% | 4.75d | -2d | 0d |  |  | 165.6h | 124.8h |
| 301 | 1.4.1.5.1 | Project Data Files Test Suite |  | 1d | 2007-09-21 A | 2007-09-21 |  | 25% | 0.75d | -50d | 0d | start no earlier than 2007-09-21 | etavela | 8h | 2h |
| 302 | 1.4.1.5.2 | Validation Test Suite |  | 15d | 2007-09-10 A | 2007-09-28 |  | 80% | 3d | 0d |  | finish no earlier than 2007-09-28 | bmason | 120h | 96h |
| 303 | 1.4.1.5.3 | Update Elaboration Test Suite |  | 3d | 2007-09-28 A | 2007-10-02 |  | 50% | 1.5d | -57d | 0d | start no earlier than 2007-09-28 | etavela [90%] | 21.6h | 10.8h |
| 304 | 1.4.1.5.4 | Dev Collaborating with QA on Testing |  | 2d | 2007-09-24 A | 2007-09-25 A |  | 100% |  |  |  | start no earlier than 2007-09-24 | bmason | 16h | 16h |
| 305 | 1.4.1.5.5 | Release QA Build C1A | milestone | 0d | 2007-09-21 A | 2007-09-21 A |  | 100% |  |  |  | start no earlier than 2007-09-21 | bmason |  |  |
| 306 | 1.4.1.5.6 | Release QA Build C1B | milestone | 0d | 2007-10-05 | 2007-10-05 |  |  |  | -59d | 0d | start no earlier than 2007-10-05 | bmason |  |  |
| 307 | 1.4.1.6 | **Environment** |  | 18.5d | 2007-09-10 A | 2007-10-04 |  | 85% | 2.75d | 0d |  |  |  | 141.2h | 130.2h |
| 308 | 1.4.1.6.1 | Acquire STAGE Environment |  | 5d | 2007-09-10 A | 2007-09-14 |  | 50% | 2.5d | -45d | 0d | start no earlier than 2007-09-10 | bgendleman [50%] | 20h | 10h |
| 309 | 1.4.1.6.2 | Update ARC Document |  | 0.5d | 2007-09-17 A | 2007-09-17 | 308 | 50% | 0.25d | -45.5d | 0d |  | bgendleman [50%] | 2h | 1h |
| 310 | 1.4.1.6.3 | Initiate DEV to QA to STAGE Deployment |  | 10d | 2007-09-17 A | 2007-10-01 A | 309 | 100% |  |  |  |  | smatyas [50%] | 40h | 40h |
| 311 | 1.4.1.6.4 | Update Build and Deploy Plan with SCM Initiative |  | 3d | 2007-10-01 A | 2007-10-04 A | 310 | 100% |  |  |  |  | etavela [80%]; smatyas [50%]; bgendleman [50%]; pduvall [50%]; lgurses | 79.2h | 79.2h |
| 312 | 1.4.1.7 | **Configuration and Change Management** |  | 20d | 2007-09-07 A | 2007-10-04 A |  | 100% |  |  |  |  |  |  |  |
| 313 | 1.4.1.7.1 | Incorporate Defect Tracking Specifics |  | 5d | 2007-09-07 A | 2007-09-13 A |  | 100% |  |  |  |  |  |  |  |
| 314 | 1.4.1.7.2 | Manage G-Forge Content |  | 20d | 2007-09-07 A | 2007-10-04 A |  | 100% |  |  |  | start no earlier than 2007-09-07 |  |  |  |
| 315 | 1.4.1.8 | C1 Complete | milestone | 0d | 2007-10-05 | 2007-10-05 | 314 |  |  | -59d | 0d | start no earlier than 2007-10-05 |  |  |  |

| ID | WBS | Task | Duration | Start | Finish | Predecessors | Complete | Remaining | Baseline start | Baseline finish | Baseline duration | Total slack | Free slack | Constraint | Deadline | Resources | Work | Actual work |
| --- | --- | --- | --- | --- | --- | --- | --- | --- | --- | --- | --- | --- | --- | --- | --- | --- | --- | --- |
| 316 | 1.4.2 | **Construction - Iteration 2** | 20d | 2007-10-05 A | 2007-11-02 | 315, 234 | 84% | 3.11d | 2007-05-17 | 2007-05-18 | 1d? | 0d |  |  |  |  | 1937.04h | 1662.4h |
| 317 | 1.4.2.1 | **Project Management** | 20d | 2007-10-08 A | 2007-11-02 |  | 83% | 3.38d |  |  |  | 0d |  |  |  |  | 280h | 208.4h |
| 318 | 1.4.2.1.1 | Weekly Status Meetings | 20d | 2007-10-08 A | 2007-11-02 A |  | 100% |  |  |  |  |  |  |  | 2007-10-08 | bgendleman | 160h | 160h |
| 319 | 1.4.2.1.2 | Dev Team Iteration Plan | 1d | 2007-10-08 A | 2007-10-08 A |  | 100% |  |  |  |  |  |  |  |  | etavela [90%] | 7.2h | 7.2h |
| 320 | 1.4.2.1.3 | Prepare Alpha Release Plan and Organization | 1.67d | 2007-10-17 A | 2007-10-18 |  | 75% | 0.42d |  |  |  | -68.67d | 0d | start no earlier than 2007-10-17 |  | bgendleman; bmason [80%] | 24h | 18h |
| 321 | 1.4.2.1.4 | Organize Feedback from Alpha Testers (Deferred) | 3.33d | 2007-10-23 | 2007-10-26 | 324 |  |  |  |  |  | -74.33d | 0d |  |  | etavela [90%] | 24h |  |
| 322 | 1.4.2.1.5 | Evolve RMP to support QA Process | 1d | 2007-10-08 A | 2007-10-08 A |  | 100% |  |  |  |  |  |  |  |  | bgendleman | 8h | 8h |
| 323 | 1.4.2.1.6 | C1 Assessment | 1d | 2007-10-22 | 2007-10-22 |  |  |  |  |  |  | -71d | 0d | start no earlier than 2007-10-22 |  | etavela [90%]; bmason; bgendleman; tparnell | 31.2h |  |
| 324 | 1.4.2.1.7 | Plan for Next Iteration | 1d | 2007-10-22 A | 2007-10-22 A |  | 100% |  |  |  |  |  |  | start no earlier than 2007-10-22 |  | bgendleman [50%] | 4h | 4h |
| 325 | 1.4.2.1.8 | **Finalize Deliverables** | 18d | 2007-10-08 A | 2007-10-31 |  | 80% | 3.6d |  |  |  | 0d |  |  |  |  | 21.6h | 11.2h |
| 326 | 1.4.2.1.8.1 | Deliver C2 Plan | 1d | 2007-10-08 A | 2007-10-08 A |  | 100% |  |  |  |  |  |  |  |  | etavela [90%] | 7.2h | 7.2h |
| 327 | 1.4.2.1.8.2 | Update Beta Release Plan (deferred) | 1d | 2007-10-26 | 2007-10-26 |  |  |  |  |  |  | -75d | 0d | start no earlier than 2007-10-26 |  | bgendleman [50%]; etavela [80%] | 10.4h |  |
| 328 | 1.4.2.1.8.3 | October Status Report | 1d | 2007-10-31 A | 2007-10-31 A |  | 100% |  |  |  |  |  |  | start no earlier than 2007-10-31 |  | bgendleman [50%] | 4h | 4h |
| 329 | 1.4.2.1.8.4 | Finalize C3 Iteration Plans | 1d | 2007-10-29 A | 2007-10-29 A | 327 | 100% |  |  |  |  |  |  | start no earlier than 2007-10-26 |  |  |  |  |
| 330 | 1.4.2.1.8.5 | Update Risk List | 1d | 2007-10-30 A | 2007-10-30 A | 329 | 100% |  |  |  |  |  |  |  |  |  |  |  |
| 331 | 1.4.2.2 | **Requirements** | 16d | 2007-10-08 A | 2007-10-29 |  | 96% | 0.58d |  |  |  | 0d |  |  |  |  | 344h | 331.2h |
| 332 | 1.4.2.2.1 | Incorporate Stakeholder Feedback on Vision and Supp Spec | 16d | 2007-10-08 A | 2007-10-29 |  | 90% | 1.6d |  |  |  | -76d | 0d | start no earlier than 2007-08-01 |  | bgendleman | 128h | 115.2h |
| 333 | 1.4.2.2.2 | Collaborate with Documentation Team on User Guides and Help | 16d | 2007-10-08 A | 2007-10-29 A |  | 100% |  |  |  |  |  |  |  |  | bgendleman | 128h | 128h |
| 334 | 1.4.2.2.3 | Complete HTML based on Wireframe Feedback | 10d | 2007-10-08 A | 2007-10-19 A |  | 100% |  |  |  |  |  |  | start no earlier than 2007-09-21 |  | bgendleman [50%]; mrehfuss | 80h | 80h |
| 335 | 1.4.2.2.4 | Collaborate with App Support to Support Online Help, User Guides | 2d | 2007-10-22 A | 2007-10-23 A | 334 | 100% |  |  |  |  |  |  |  |  | bgendleman [50%] | 8h | 8h |
| 336 | 1.4.2.3 | **Analysis and Design** | 15d | 2007-10-05 A | 2007-10-26 |  | 86% | 2.1d |  |  |  | -7d | 0d |  |  |  | 134.8h | 99.6h |
| 337 | 1.4.2.3.1 | **Complete C1 Use Case Designs** | 8d | 2007-10-05 A | 2007-10-17 |  | 95% | 0.4d |  |  |  | 0d |  |  |  |  | 92.4h | 88.4h |
| 338 | 1.4.2.3.1.1 | Manage Permissions | 2d | 2007-10-05 A | 2007-10-09 A |  | 100% |  |  |  |  |  |  |  |  | tparnell; bmason | 16h | 16h |
| 339 | 1.4.2.3.1.2 | Manage Collaborators | 1d | 2007-10-10 A | 2007-10-10 A | 338 | 100% |  |  |  |  |  |  |  |  | bmason; tparnell | 16h | 16h |
| 340 | 1.4.2.3.1.3 | Register | 1d | 2007-10-11 A | 2007-10-11 A | 339 | 100% |  |  |  |  |  |  |  |  | jhedden; smiller [25%] | 10h | 10h |
| 341 | 1.4.2.3.1.4 | Manage Users (UPT 3.2) | 2d | 2007-10-12 A | 2007-10-15 | 340 | 80% | 0.4d |  |  |  | -66d | 0d |  |  | jhedden; smiller [25%] | 20h | 16h |
| 342 | 1.4.2.3.1.5 | Search Repository | 1d | 2007-10-16 A | 2007-10-16 A | 341 | 100% |  |  |  |  |  |  |  |  | bmason; etavela [90%]; tparnell | 23.2h | 23.2h |
| 343 | 1.4.2.3.1.6 | Import Array Designs | 1d | 2007-10-17 A | 2007-10-17 A | 342 | 100% |  |  |  |  |  |  |  |  | etavela [90%] | 7.2h | 7.2h |
| 344 | 1.4.2.3.2 | Review Updated Model with Mentors and Stakeholders | 0.5d | 2007-10-09 A | 2007-10-09 A | 348 | 100% |  |  |  |  |  |  | start no earlier than 2007-10-09 |  | etavela [90%] | 3.6h | 3.6h |
| 345 | 1.4.2.3.3 | Update Model Dependent Upon Mentor and Stakeholder Review | 0.5d | 2007-10-09 A | 2007-10-09 A | 344 | 100% |  |  |  |  |  |  |  |  | etavela [90%]; tparnell | 7.6h | 7.6h |
| 346 | 1.4.2.3.4 | Update Software Architecture Document | 1d | 2007-10-26 | 2007-10-26 | 344 |  |  |  |  |  | -75d | 0d | start no earlier than 2007-10-26 |  | etavela [90%]; bmason; tparnell; jhedden | 31.2h |  |

| ID | WBS | Task | Duration | Start | Finish | Predecessors | Complete | Remaining | Total slack | Free slack | Constraint | Resources | Work | Actual work |
| --- | --- | --- | --- | --- | --- | --- | --- | --- | --- | --- | --- | --- | --- | --- |
| 347 | 1.4.2.4 | **Implementation** | 18d | 2007-10-08 A | 2007-10-31 |  | 81% | 3.5d | 0d |  |  |  | 846.4h | 744h |
| 348 | 1.4.2.4.1 | Incorporate All Requested Changes into Domain Model | 1d | 2007-10-08 A | 2007-10-08 A |  | 100% |  |  |  | start no earlier than 2007-10-05 | etavela [90%] | 7.2h | 7.2h |
| 349 | 1.4.2.4.2 | **Targeted Alpha Use Cases** | 14d | 2007-10-08 A | 2007-10-25 A |  | 100% |  |  |  |  |  | 315.2h | 315.2h |
| 350 | 1.4.2.4.2.1 | Login Use Case (lock out not included) | 1d | 2007-10-08 A | 2007-10-08 A |  | 100% |  |  |  |  | jhedden | 8h | 8h |
| 351 | 1.4.2.4.2.2 | Acquire Experiment Data via Java API | 0.5d | 2007-10-10 A | 2007-10-10 A | 345 | 100% |  |  |  | start no earlier than 2007-10-05 | etavela [90%] | 3.6h | 3.6h |
| 352 | 1.4.2.4.2.3 | Acquire Experiment Data via API - Grid | 2d | 2007-10-10 A | 2007-10-11 A | 345 | 100% |  |  |  |  | tparnell | 16h | 16h |
| 353 | 1.4.2.4.2.4 | Upload Experiment Data Files - Multi available not .zip presentation | 3d | 2007-10-09 A | 2007-10-11 A | 350 | 100% |  |  |  |  | jhedden; etavela [25%] | 30h | 30h |
| 354 | 1.4.2.4.2.5 | Register | 10d | 2007-10-12 A | 2007-10-25 A | 350, 353 | 100% |  |  |  |  | jhedden; smiller [20%] | 96h | 96h |
| 355 | 1.4.2.4.2.6 | Import Experiment Data Files - MAGE-TAB, GE + SNP forAffy, Illumina | 3d | 2007-10-10 A | 2007-10-15 A | 351 | 100% |  |  |  |  | etavela [90%] | 21.6h | 21.6h |
| 356 | 1.4.2.4.2.7 | Manage Experiment Data Files - Change Type + Delete | 2d | 2007-10-10 A | 2007-10-11 A | 338 | 100% |  |  |  |  | bmason | 16h | 16h |
| 357 | 1.4.2.4.2.8 | Validate Experiment Data Files | 2d | 2007-10-15 A | 2007-10-17 A | 355, 356 | 100% |  |  |  |  | bmason; etavela [25%] | 20h | 20h |
| 358 | 1.4.2.4.2.9 | Sumbit Experiment Proposal - Required Annotation, Save as Drfat | 5d | 2007-10-08 A | 2007-10-12 A |  | 100% |  |  |  |  | dkokotov | 40h | 40h |
| 359 | 1.4.2.4.2.10 | Update Experiment Proposal - Update Draft + Submit | 3d | 2007-10-15 A | 2007-10-17 A | 358 | 100% |  |  |  |  | dkokotov | 24h | 24h |
| 360 | 1.4.2.4.2.11 | Manage Permissions - public/private flag | 2d | 2007-10-08 A | 2007-10-09 A |  | 100% |  |  |  | start no earlier than 2007-10-08 | tparnell | 16h | 16h |
| 361 | 1.4.2.4.2.12 | Download Data | 3d | 2007-10-12 A | 2007-10-16 A | 352 | 100% |  |  |  |  | tparnell | 24h | 24h |
| 362 | 1.4.2.4.3 | **Start C2 UC's Not Targeted for A1** | 11d | 2007-10-17 A | 2007-10-31 |  | 54% | 5.08d | 0d |  |  |  | 104h | 56h |
| 363 | 1.4.2.4.3.1 | Manage Collaborators | 5d | 2007-10-17 A | 2007-10-23 A | 352, 361 | 100% |  |  |  |  | tparnell | 40h | 40h |
| 364 | 1.4.2.4.3.2 | Search Repository | 8d | 2007-10-18 A | 2007-10-31 | 353, 342, 372 | 25% | 6d | -78d | 0d |  | wcheng | 64h | 16h |
| 365 | 1.4.2.4.4 | **Data Management** | 17.67d | 2007-10-08 A | 2007-10-31 |  | 13% | 15.36d | -8.17d | 0d |  |  | 61.6h | 7.2h |
| 366 | 1.4.2.4.4.1 | Add Data Parsers for GenePix | 2d | 2007-10-17 A | 2007-10-19 | 355, 357 | 50% | 1d | -69.5d | 0d |  | etavela [90%] | 14.4h | 7.2h |
| 367 | 1.4.2.4.4.2 | Add Data Parsers for Agilent (Deferred) | 2d | 2007-10-08 | 2007-10-09 |  |  |  | -62d | 0d |  | etavela [90%] | 14.4h |  |
| 368 | 1.4.2.4.4.3 | Start 1.x Migration Scripts (deferred) | 1.67d | 2007-10-26 | 2007-10-29 |  |  |  | -77.67d | 0d | start no earlier than 2007-10-26 | etavela [90%] | 12h |  |
| 369 | 1.4.2.4.4.4 | Plan and Acquire Initial 1.x Test Data to DEV | 2d | 2007-10-29 | 2007-10-31 | 368 |  |  | -77.67d | 0d | start no earlier than 2007-10-24 | smatyas [50%]; etavela [80%] | 20.8h |  |
| 370 | 1.4.2.4.5 | Fix Defects Found in Alpha Release (deferred but fixes have been done) | 7d | 2007-10-23 A | 2007-10-31 A |  | 100% |  |  |  | start no earlier than 2007-10-23 | etavela [80%]; dkokotov; jhedden; tparnell; bmason; smiller [60%]; rsrinivasa | 358.4h | 358.4h |

| ID | WBS | Task | Type | Duration | Start | Finish | Predecessors | Complete | Remaining | Total slack | Free slack | Constraint | Resources | Work | Actual work |
| --- | --- | --- | --- | --- | --- | --- | --- | --- | --- | --- | --- | --- | --- | --- | --- |
| 371 | 1.4.2.5 | **Test** |  | 16d | 2007-10-11 A | 2007-11-02 |  | 91% | 1.41d | -1.5d | 0d |  |  | 188.8h | 158.8h |
| 372 | 1.4.2.5.1 | Establish Performance Benchmarks |  | 5d | 2007-10-11 A | 2007-10-17 |  | 90% | 0.5d | 0d |  | finish no earlier than 2007-10-17 | bmason; etavela [90%] | 68.8h | 61.2h |
| 373 | 1.4.2.5.2 | Create, Execute and Report on Jmeter Performance Test Cases |  | 10d | 2007-10-17 A | 2007-10-31 A | 357 | 100% |  |  |  |  | bmason [60%] | 48h | 48h |
| 374 | 1.4.2.5.3 | Create, Execute and Report on Selenium User Interface Test Cases |  | 7.37d | 2007-10-17 A | 2007-10-26 |  | 80% | 1.47d | -94.37d | 0d | start no earlier than 2007-10-17 | rsrinivasa [90%]; bmason | 72h | 49.6h |
| 375 | 1.4.2.5.4 | Release Build R2_0_0_QA6 | milestone | 0d | 2007-10-11 A | 2007-10-11 A | 352 | 100% |  |  |  |  |  |  |  |
| 376 | 1.4.2.5.5 | Release Build R2_0_0_Alpha1 | milestone | 0d | 2007-11-02 | 2007-11-02 |  |  |  | -93d | 0d | start no earlier than 2007-11-02 |  |  |  |
| 377 | 1.4.2.5.6 | Release Build R2_0_0_QA7 | milestone | 0d | 2007-10-19 A | 2007-10-19 A |  | 100% |  |  |  | finish no earlier than 2007-11-02 |  |  |  |
| 378 | 1.4.2.6 | **Environment** |  | 18d | 2007-10-08 A | 2007-10-31 |  | 61% | 7.06d | 0d |  |  |  | 63.04h | 40.4h |
| 379 | 1.4.2.6.1 | Provide Command Line Support for Linux |  | 3d | 2007-10-08 A | 2007-10-10 A |  | 100% |  |  |  |  | pduvall [33%]; lgurses [33%] | 15.84h | 15.84h |
| 380 | 1.4.2.6.2 | Run Unit, Functional, Performance Tests in All Environments |  | 18d | 2007-10-08 A | 2007-10-31 |  | 50% | 9d | -78d | 0d |  | pduvall [10%]; lgurses [10%] | 28.8h | 14.4h |
| 381 | 1.4.2.6.3 | Support GLOBUS in All Environments (Unexpected Environment Dependency) |  | 2d | 2007-10-11 A | 2007-10-12 | 379 | 90% | 0.2d | -65d | 0d |  | pduvall [5%]; lgurses [5%]; tparnell [5%] | 2.4h | 2.16h |
| 382 | 1.4.2.6.4 | Enable CruiseControl to Run Unit, Functional, Performance Tests in Dev |  | 2d | 2007-10-15 A | 2007-10-16 | 381 | 50% | 1d | -67d | 0d |  | pduvall [50%]; lgurses [50%] | 16h | 8h |
| 383 | 1.4.2.6.5 | Update Build and Deploy Plan with SCM Initiative |  | 1d | 2007-10-17 A | 2007-10-17 A | 382 | 100% |  |  |  |  |  |  |  |
| 384 | 1.4.2.7 | **Configuration and Change Management** |  | 20d | 2007-10-08 A | 2007-11-02 |  | 95% | 0.95d | 0d |  |  |  | 80h | 80h |
| 385 | 1.4.2.7.1 | Manage Gforge Content |  | 20d | 2007-10-08 A | 2007-11-02 A |  | 100% |  |  |  |  | bgendleman [25%]; bmason [25%] | 80h | 80h |
| 386 | 1.4.2.7.2 | Prioritize 2.0 Defects and UC for 2.x |  | 1d | 2007-11-02 | 2007-11-02 | 377 |  |  | -80d | 0d | start no earlier than 2007-11-02 |  |  |  |
| 387 | 1.4.2.8 | C2 Complete | milestone | 0d | 2007-11-02 | 2007-11-02 | 371 |  |  | -93d | 0d |  |  |  |  |
| 388 | 1.4.3 | **Construction - Iteration 3** |  | 14d | 2007-11-02 | 2007-11-21 | 387 |  |  | -93d | 0d |  |  | 1495.67h |  |
| 389 | 1.4.3.1 | **Project Management** |  | 12d | 2007-11-02 | 2007-11-19 |  |  |  | -91d | 0d |  |  | 204h |  |
| 390 | 1.4.3.1.1 | Weekly Status Meetings |  | 2.2d | 2007-11-15 | 2007-11-19 |  |  |  | -91d | 0d | finish no earlier than 2007-11-19 | bgendleman [50%]; bmason; tparnell | 44h |  |
| 391 | 1.4.3.1.2 | Dev Team Iteration Plan |  | 1d | 2007-11-05 | 2007-11-05 |  |  |  | -83d | 0d | start no earlier than 2007-11-05 | bgendleman [50%] | 4h |  |
| 392 | 1.4.3.1.3 | Prepare Alpha Release Plan |  | 2d | 2007-11-06 | 2007-11-07 | 391 |  |  | -83d | 0d |  | bgendleman [50%] | 8h |  |
| 393 | 1.4.3.1.4 | C2 Assessment/C3 Review |  | 1d | 2007-11-12 | 2007-11-12 |  |  |  | -86d | 0d | start no earlier than 2007-11-12 | bgendleman [50%] | 4h |  |
| 394 | 1.4.3.1.5 | Plan for Next Iteration |  | 1d | 2007-11-02 | 2007-11-02 |  |  |  | -80d | 0d |  | bgendleman [50%] | 4h |  |

| ID | WBS | Task | Duration | Start | Finish | Predecessors | Total slack | Free slack | Constraint | Resources | Work |
| --- | --- | --- | --- | --- | --- | --- | --- | --- | --- | --- | --- |
| 395 | 1.4.3.1.6 | **Finalize Deliverables** | 7d | 2007-11-02 | 2007-11-12 |  | -86d | 0d |  |  | 140h |
| 396 | 1.4.3.1.6.1 | Deliver C3 Plan | 3d | 2007-11-02 | 2007-11-06 |  | -86d | 0d |  | bgendleman [50%]; bmason; tparnell | 60h |
| 397 | 1.4.3.1.6.2 | Update Beta Release Plan | 1d | 2007-11-07 | 2007-11-07 | 396 | -86d | 0d |  | bgendleman [50%]; bmason; tparnell | 20h |
| 398 | 1.4.3.1.6.3 | Finalize T1 Iteration Plan | 2d | 2007-11-08 | 2007-11-09 | 397 | -86d | 0d |  | bgendleman [50%]; bmason; tparnell | 40h |
| 399 | 1.4.3.1.6.4 | Update Risk List | 1d | 2007-11-12 | 2007-11-12 | 398 | -86d | 0d |  | bgendleman [50%]; bmason; tparnell | 20h |
| 400 | 1.4.3.2 | **Requirements** | 14d | 2007-11-02 | 2007-11-21 |  | -93d | 0d |  |  | 72h |
| 401 | 1.4.3.2.1 | Update Vision and UC Summary with 2.x Priorities | 2d | 2007-11-02 | 2007-11-05 |  | -84d | 0d |  | bgendleman [50%] | 8h |
| 402 | 1.4.3.2.2 | Incorporate Stakeholder Feedback on C2 Use Cases | 2d | 2007-11-06 | 2007-11-07 | 401 | -84d | 0d |  | bgendleman [50%] | 8h |
| 403 | 1.4.3.2.3 | Incorporate Stakeholder Feedback on C2 UI Mockups | 1d | 2007-11-08 | 2007-11-08 | 402 | -84d | 0d |  | bgendleman [50%] | 4h |
| 404 | 1.4.3.2.4 | Collaborate with Documentation to Support Online Help, User Guides | 13d | 2007-11-05 | 2007-11-21 |  | -93d | 0d | finish no earlier than 2007-11-21 | bgendleman [50%] | 52h |
| 405 | 1.4.3.3 | **Analysis and Design** | 4d | 2007-11-02 | 2007-11-07 |  | -83d | 0d |  |  | 68h |
| 406 | 1.4.3.3.1 | Revise Domain Object (Logical) Model with GeneID | 1d | 2007-11-05 | 2007-11-05 |  | -84d | 0d | start no earlier than 2007-11-05 | etavela | 8h |
| 407 | 1.4.3.3.2 | Support Analysis Services Integration as Needed | 3d | 2007-11-02 | 2007-11-06 |  | -82d | 0d |  | tparnell | 24h |
| 408 | 1.4.3.3.3 | Investigate EVS Methods for Vocabulary Retrieval | 1d | 2007-11-07 | 2007-11-07 |  | -83d | 0d | finish no earlier than 2007-11-07 | smiller | 8h |
| 409 | 1.4.3.3.4 | Design Migration Strategy for 1.x Experiments | 1d | 2007-11-02 | 2007-11-02 |  | -80d | 0d |  | etavela; smatyas [50%] | 12h |
| 410 | 1.4.3.3.5 | Update Software Architecture Document | 1d | 2007-11-02 | 2007-11-02 |  | -80d | 0d |  | tparnell; etavela | 16h |
| 411 | 1.4.3.4 | **Implementation** | 14d | 2007-11-02 | 2007-11-21 |  | -93d | 0d |  |  | 759.67h |
| 412 | 1.4.3.4.1 | **Inroduce and Complete C3 UC's** | 12.91d | 2007-11-02 | 2007-11-20 |  | -91.91d | 0d |  |  | 113.6h |
| 413 | 1.4.3.4.1.1 | Search Repository UC | 5.45d | 2007-11-02 | 2007-11-09 |  | -91.91d | 0d |  | wcheng; tparnell [10%] | 48h |
| 414 | 1.4.3.4.1.2 | Navigate Repository UC | 5.45d | 2007-11-09 | 2007-11-16 | 413 | -91.91d | 0d |  | wcheng; tparnell [10%] | 48h |
| 415 | 1.4.3.4.1.3 | Import Array Design UC | 2d | 2007-11-16 | 2007-11-20 | 414 | -91.91d | 0d |  | wcheng; etavela [10%] | 17.6h |
| 416 | 1.4.3.4.2 | **Complete C2 UC's** | 14d | 2007-11-02 | 2007-11-21 |  | -93d | 0d |  |  | 344h |
| 417 | 1.4.3.4.2.1 | Manage Exp Data Files - Full UI (Add Filter, Associate File<->Sample, Progress Meter) | 8d | 2007-11-02 | 2007-11-13 |  | -87d | 0d |  | smiller | 64h |
| 418 | 1.4.3.4.2.2 | Download Exp. Data UC (Download Job) | 2d | 2007-11-02 | 2007-11-05 |  | -81d | 0d |  | tparnell | 16h |
| 419 | 1.4.3.4.2.3 | Manage Experiment Permissions UC - Complete Sample Level and TCGA Policy | 3d | 2007-11-02 | 2007-11-06 |  | -93d | 0d |  | dkokotov; tparnell | 48h |
| 420 | 1.4.3.4.2.4 | Manage Publications UC (edit, delete) | 1d | 2007-11-07 | 2007-11-07 | 419 | -93d | 0d |  | dkokotov | 8h |
| 421 | 1.4.3.4.2.5 | Submit Experiment Proposal (validation, draft, incorporate UCV) | 5d | 2007-11-08 | 2007-11-14 | 420 | -93d | 0d |  | dkokotov; smiller | 80h |
| 422 | 1.4.3.4.2.6 | Update Experiment Proposal (validation, across states, edit entity association) | 5d | 2007-11-15 | 2007-11-21 | 421 | -93d | 0d |  | dkokotov | 40h |
| 423 | 1.4.3.4.2.7 | Import Experiment Data (improve validation, add genepix, fix UI scheme for large file sets, auto-chain choice) | 4d | 2007-11-02 | 2007-11-07 |  | -83d | 0d |  | smiller | 32h |
| 424 | 1.4.3.4.2.8 | Manage Collaborators | 2d | 2007-11-02 | 2007-11-05 |  | -81d | 0d |  | tparnell | 16h |
| 425 | 1.4.3.4.2.9 | Manage Users (ensure UPT3.2 works) | 1d | 2007-11-02 | 2007-11-02 |  | -80d | 0d |  | tparnell | 8h |
| 426 | 1.4.3.4.2.10 | Validate Data Files (Add Illumina, GenePix Validation, Other File Skip Validation) | 1d | 2007-11-02 | 2007-11-02 |  | -80d | 0d |  | etavela | 8h |
| 427 | 1.4.3.4.2.11 | Acquire Experiment Data Via API (Convenience Queries and Response to Size Limit) | 3d | 2007-11-02 | 2007-11-06 |  | -82d | 0d |  | etavela | 24h |

| ID | WBS | Task | Type | Duration | Start | Finish | Predecessors | Baseline start | Baseline finish | Baseline duration | Total slack | Free slack | Constraint | Resources | Work |
| --- | --- | --- | --- | --- | --- | --- | --- | --- | --- | --- | --- | --- | --- | --- | --- |
| 428 | 1.4.3.4.3 | **Data Management** |  | 5d | 2007-11-02 | 2007-11-08 |  |  |  |  | -84d | 0d |  |  | 40h |
| 429 | 1.4.3.4.3.1 | Support MAGE-TAB Import (allow for .txt to be valid) |  | 1d | 2007-11-02 | 2007-11-02 |  |  |  |  | -80d | 0d |  | etavela | 8h |
| 430 | 1.4.3.4.3.2 | Annotate Model for caDSR Submission |  | 3d | 2007-11-06 | 2007-11-08 | 406 |  |  |  | -84d | 0d | start no earlier than 2007-11-05 | etavela | 24h |
| 431 | 1.4.3.4.3.3 | Add Data Parsers for GenePix |  | 0.5d | 2007-11-02 | 2007-11-02 |  |  |  |  | -79.5d | 0d |  | etavela | 4h |
| 432 | 1.4.3.4.3.4 | Import Experiment Data Files Gene Pix |  | 0.5d | 2007-11-02 | 2007-11-02 |  |  |  |  | -79.5d | 0d |  | etavela | 4h |
| 433 | 1.4.3.4.4 | Fix Defects Found in QA7&8 |  | 12d | 2007-11-05 | 2007-11-20 |  |  |  |  | -92d | 0d | finish no earlier than 2007-11-20 | etavela [80%]; bmason [10%]; tparnell; smiller; dkokotov; wcheng; rsrinivasa [10%] | 262.07h |
| 434 | 1.4.3.5 | **Test** |  | 13d | 2007-11-02 | 2007-11-21 |  |  |  |  | -92d | 0d |  |  | 224h |
| 435 | 1.4.3.5.1 | Write, Execute and Record UI Test Cases in Selenium |  | 12d | 2007-11-02 | 2007-11-19 |  |  |  |  | -91d | 0d |  | bmason | 96h |
| 436 | 1.4.3.5.2 | Write, Execute and Record Performance Test Cases in Jmeter |  | 12d | 2007-11-02 | 2007-11-19 |  |  |  |  | -91d | 0d |  | rsrinivasa | 96h |
| 437 | 1.4.3.5.3 | Release QA Build C3A - Alpha 1 | milestone | 0d | 2007-11-21 | 2007-11-21 |  |  |  |  | -92d | 0d | start no earlier than 2007-11-21 |  |  |
| 438 | 1.4.3.5.4 | Load 1.x Data from DEV to QA to STAGE |  | 2d | 2007-11-02 | 2007-11-05 |  |  |  |  | -81d | 0d |  | bmason; rsrinivasa | 32h |
| 439 | 1.4.3.6 | **Environment** |  | 13d | 2007-11-05 | 2007-11-21 |  |  |  |  | -93d | 0d |  |  | 168h |
| 440 | 1.4.3.6.1 | Design and Create caArray 2.0 Installer |  | 10d | 2007-11-05 | 2007-11-16 |  |  |  |  | -90d | 0d | start no earlier than 2007-11-05 | pduvall; lgurses | 160h |
| 441 | 1.4.3.6.2 | Update Build and Deploy Plan with SCM Initiative |  | 1d | 2007-11-21 | 2007-11-21 |  |  |  |  | -93d | 0d | start no earlier than 2007-11-21 |  |  |
| 442 | 1.4.3.6.3 | Prepare Deployment to Bundle Environment |  | 1d | 2007-11-14 | 2007-11-14 |  |  |  |  | -88d | 0d | start no earlier than 2007-11-14 | lgurses | 8h |
| 443 | 1.4.3.7 | **Configuration and Change Management** |  | 14d | 2007-11-02 | 2007-11-21 |  |  |  |  | -93d | 0d |  |  |  |
| 444 | 1.4.3.7.1 | Manage Gforge Content |  | 14d | 2007-11-02 | 2007-11-21 |  |  |  |  | -93d | 0d |  |  |  |
| 445 | 1.4.3.7.2 | Prioritize 2.0 Defects |  | 14d | 2007-11-02 | 2007-11-21 |  |  |  |  | -93d | 0d |  |  |  |
| 446 | 1.4.3.7.3 | Prepare Download Center Material, Release Notes |  | 2d | 2007-11-19 | 2007-11-20 |  |  |  |  | -92d | 0d | start no earlier than 2007-11-19 |  |  |
| 447 | 1.4.3.8 | C3 Complete | milestone | 0d | 2007-11-21 | 2007-11-21 | 445, 444 | 2007-05-17 | 2007-05-18 | 1d? | -93d | 0d | start no earlier than 2007-11-21 |  |  |
| 448 | 1.5 | **Transition Phase** |  | 16d | 2007-11-22 | 2007-12-14 | 233 | 2007-05-18 | 2007-05-21 | 1d? | -99d | 0d |  |  | 364.8h |
| 449 | 1.5.1 | **Transition - Iteration 1** |  | 16d | 2007-11-22 | 2007-12-14 |  | 2007-05-18 | 2007-05-21 | 1d? | -99d | 0d |  |  | 364.8h |
| 450 | 1.5.1.1 | **Project Management** |  | 10d | 2007-11-22 | 2007-12-05 |  |  |  |  | -93d | 0d |  |  |  |
| 451 | 1.5.1.1.1 | Weekly Status Meetings |  | 10d | 2007-11-22 | 2007-12-05 |  |  |  |  | -93d | 0d |  |  |  |
| 452 | 1.5.1.1.2 | Dev Team Iteration Plan |  | 1d | 2007-11-22 | 2007-11-22 |  |  |  |  | -84d | 0d |  |  |  |
| 453 | 1.5.1.1.3 | Prepare GA Release Plan |  | 2d | 2007-11-22 | 2007-11-23 |  |  |  |  | -85d | 0d |  |  |  |
| 454 | 1.5.1.1.4 | Organize Feedback from Beta Testers |  | 1d | 2007-11-22 | 2007-11-22 |  |  |  |  | -84d | 0d |  |  |  |
| 455 | 1.5.1.1.5 | C3 Assessment |  | 1d | 2007-11-22 | 2007-11-22 |  |  |  |  | -84d | 0d |  |  |  |
| 456 | 1.5.1.1.6 | T1 Review |  | 1d | 2007-11-22 | 2007-11-22 |  |  |  |  | -84d | 0d | start no earlier than 2007-11-19 |  |  |
| 457 | 1.5.1.1.7 | Plan for Next Iteration |  | 1d | 2007-11-22 | 2007-11-22 |  |  |  |  | -84d | 0d |  |  |  |

| ID | WBS | Task | Type | Duration | Start | Finish | Predecessors | Total slack | Free slack | Constraint | Resources | Work |
| --- | --- | --- | --- | --- | --- | --- | --- | --- | --- | --- | --- | --- |
| 458 | 1.5.1.1.8 | **Finalize Deliverables** |  | 7d | 2007-11-22 | 2007-11-30 |  | -90d | 0d |  |  |  |
| 459 | 1.5.1.1.8.1 | Deliver T1 Plan |  | 3d | 2007-11-22 | 2007-11-26 |  | -90d | 0d |  |  |  |
| 460 | 1.5.1.1.8.2 | Prepare GA Release Plan |  | 1d | 2007-11-27 | 2007-11-27 | 459 | -90d | 0d |  |  |  |
| 461 | 1.5.1.1.8.3 | November Status Report |  | 1d | 2007-11-22 | 2007-11-22 |  | -84d | 0d | start no earlier than 2007-11-15 |  |  |
| 462 | 1.5.1.1.8.4 | Finalize T1 Iteration Plan |  | 2d | 2007-11-28 | 2007-11-29 | 460 | -90d | 0d |  |  |  |
| 463 | 1.5.1.1.8.5 | Update Risk List |  | 1d | 2007-11-30 | 2007-11-30 | 462 | -90d | 0d |  |  |  |
| 464 | 1.5.1.2 | **Requirements** |  | 5d | 2007-11-22 | 2007-11-28 |  | -88d | 0d |  |  |  |
| 465 | 1.5.1.2.1 | Finalize Documentation for GA Release |  | 5d | 2007-11-22 | 2007-11-28 |  | -88d | 0d |  |  |  |
| 466 | 1.5.1.2.2 | **Write 2.x Use Cases** |  | 3.5d | 2007-11-22 | 2007-11-27 |  | -86.5d | 0d |  |  |  |
| 467 | 1.5.1.2.2.1 | UC Manage Institutional Groups |  | 1d | 2007-11-22 | 2007-11-22 |  | -86.5d | 0d |  |  |  |
| 468 | 1.5.1.2.2.2 | Update UC Search Repository |  | 0.5d | 2007-11-23 | 2007-11-23 | 467 | -86.5d | 0d |  |  |  |
| 469 | 1.5.1.2.2.3 | UC Register For An Account |  | 1d | 2007-11-23 | 2007-11-26 | 468 | -86.5d | 0d |  |  |  |
| 470 | 1.5.1.2.2.4 | UC Manage Collaborators |  | 1d | 2007-11-26 | 2007-11-27 | 469 | -86.5d | 0d |  |  |  |
| 471 | 1.5.1.3 | **Analysis and Design** |  | 1d | 2007-11-22 | 2007-11-22 |  | -84d | 0d |  |  |  |
| 472 | 1.5.1.3.1 | Model Manipulation as needed |  | 1d | 2007-11-22 | 2007-11-22 |  | -84d | 0d |  |  |  |
| 473 | 1.5.1.4 | **Implementation** |  | 10d | 2007-11-22 | 2007-12-05 |  | -93d | 0d |  |  | 364.8h |
| 474 | 1.5.1.4.1 | Complete Targeted Defects for GA |  | 8.46d | 2007-11-22 | 2007-12-04 |  | -91.46d | 0d |  | etavela [80%]; bmason; tparnell; dkokotov; jhedden | 324.8h |
| 475 | 1.5.1.4.2 | Complete caArray 2.0 Installer + Data Migrator |  | 10d | 2007-11-22 | 2007-12-05 |  | -93d | 0d |  | smatyas [50%] | 40h |
| 476 | 1.5.1.5 | **Test** |  | 16d | 2007-11-22 | 2007-12-14 |  | -99d | 0d |  |  |  |
| 477 | 1.5.1.5.1 | Release QA Build Beta 1 | milestone | 0d | 2007-12-07 | 2007-12-07 |  | -96d | 0d | start no earlier than 2007-12-07 |  |  |
| 478 | 1.5.1.5.2 | Release QA Build T1B - GA (Bundle) | milestone | 0d | 2007-12-14 | 2007-12-14 |  | -99d | 0d | start no earlier than 2007-12-14 |  |  |
| 479 | 1.5.1.5.3 | Load 1.x Data from DEV to QA to STAGE to PROD |  | 10d | 2007-11-22 | 2007-12-05 |  | -93d | 0d |  |  |  |
| 480 | 1.5.1.6 | **Environment** |  | 1d | 2007-12-12 | 2007-12-12 |  | -98d | 0d |  |  |  |
| 481 | 1.5.1.6.1 | Update Build and Deploy Plan with SCM Initiative |  | 1d | 2007-12-12 | 2007-12-12 |  | -98d | 0d | start no earlier than 2007-12-12 |  |  |

| ID | WBS | Task | Type | Duration | Start | Finish | Predecessors | Total slack | Free slack | Constraint |
| --- | --- | --- | --- | --- | --- | --- | --- | --- | --- | --- |
| 482 | 1.5.1.7 | **Configuration and Change Management** |  | 13d | 2007-11-22 | 2007-12-10 |  | -96d | 0d |  |
| 483 | 1.5.1.7.1 | Manage Gforge Content |  | 10d | 2007-11-22 | 2007-12-05 |  | -93d | 0d |  |
| 484 | 1.5.1.7.2 | Prioritize 2.0 Defects and UC for 2.x |  | 1d | 2007-11-22 | 2007-11-22 | 483 | -84d | 0d |  |
| 485 | 1.5.1.7.3 | Release Download Center Material, Release Notes |  | 2d | 2007-12-07 | 2007-12-10 | 477 | -96d | 0d |  |
| 486 | 1.5.1.8 | T1 Complete | milestone | 0d | 2007-12-14 | 2007-12-14 | 484 | -99d | 0d | start no earlier than 2007-12-14 |
